Schedule from MS Project, 2016-05-06 to 2016-08-12, costs in $.
microsoft

## Calendars

- Estándar: Mon-Fri 09:00-13:00, 15:00-19:00; Sat-Sun off.

## Resources

| Resource | Rate |
| --- | --- |
| Administrador de Proyecto | 180 |
| Analista de Proyecto | 162.5 |
| Diseñador | 137.5 |
| Programado | 120 |
| Tester | 115 |
| Asegurador de la Calidad | 110 |
| Administrador de Configuración | 110 |
| Stakeholder |  |

## Schedule

| ID | WBS | Task | Type | Duration | Start | Finish | Predecessors | Total slack | Resources | Work | Cost |
| --- | --- | --- | --- | --- | --- | --- | --- | --- | --- | --- | --- |
| 1 | 1 | **Plan Preliminar** |  | 1.75d | 2016-05-11 09:00 | 2016-05-12 17:00 |  | 0d |  | 14h | 2,520 |
| 2 | 1.1 | Generar WBS del producto inicial |  | 4h | 2016-05-11 09:00 | 2016-05-11 13:00 |  | 0d | Administrador de Proyecto | 4h | 720 |
| 3 | 1.2 | Generar Project Charter |  | 1h | 2016-05-11 15:00 | 2016-05-11 16:00 | 2 | 0d | Administrador de Proyecto | 1h | 180 |
| 4 | 1.3 | Plan Preliminar del proyecto |  | 8h | 2016-05-11 16:00 | 2016-05-12 16:00 | 3 | 0d | Administrador de Proyecto | 8h | 1,440 |
| 5 | 1.4 | Matriz de comunicación |  | 1h | 2016-05-12 16:00 | 2016-05-12 17:00 | 4 | 0d | Administrador de Proyecto | 1h | 180 |
| 6 | 1.5 | Entrega de WBS del producto inicial, project charter, plan preliminar y matriz de comunicación | milestone | 0d | 2016-05-11 09:00 | 2016-05-11 09:00 |  | 67d |  |  |  |
| 7 | 2 | **Nombre"Proyecto"** |  | 43.56d? | 2016-05-12 17:00 | 2016-07-13 11:30 |  | 0d |  | 336.5h | 46,375 |
| 8 | 2.1 | Formación del equipo |  | 1h | 2016-05-12 17:00 | 2016-05-12 18:00 | 5 | 0d | Administrador de Proyecto | 1h | 180 |
| 9 | 2.2 | **Construcción** |  | 43.44d? | 2016-05-12 18:00 | 2016-07-13 11:30 | 8 | 0d |  | 335.5h | 46,195 |
| 10 | 2.2.1 | **FaseUno/IteraciónUno** |  | 26d? | 2016-05-12 18:00 | 2016-06-17 18:00 |  | 0d |  | 196h | 26,353.75 |
| 11 | 2.2.1.1 | **Análisis** |  | 4.69d | 2016-05-12 18:00 | 2016-05-19 15:30 |  | 0d |  | 37.5h | 6,636.25 |
| 12 | 2.2.1.1.1 | **Elicitación** |  | 3.12d | 2016-05-12 18:00 | 2016-05-17 19:00 |  | 0d |  | 25h | 4,500 |
| 13 | 2.2.1.1.1.1 | Generar la lista de proveedores |  | 2h | 2016-05-12 18:00 | 2016-05-13 10:00 |  | 0d | Administrador de Proyecto | 2h | 360 |
| 14 | 2.2.1.1.1.2 | Evaluar proveedores de requerimientos |  | 1h | 2016-05-13 10:00 | 2016-05-13 11:00 | 13 | 0d | Administrador de Proyecto | 1h | 180 |
| 15 | 2.2.1.1.1.3 | Definir estrategias de recolección de datos |  | 0.5h | 2016-05-13 11:00 | 2016-05-13 11:30 | 14 | 0d | Administrador de Proyecto | 0.5h | 90 |
| 16 | 2.2.1.1.1.4 | Planificacion de reuniones de licitación |  | 1.5h | 2016-05-13 11:30 | 2016-05-13 13:00 | 15 | 0d | Administrador de Proyecto | 1.5h | 270 |
| 17 | 2.2.1.1.1.5 | Identificar procesos del sistema |  | 8h | 2016-05-13 15:00 | 2016-05-16 13:00 | 16 | 0d | Administrador de Proyecto | 8h | 1,440 |
| 18 | 2.2.1.1.1.6 | Identificar requerimientos funcionales |  | 8h | 2016-05-16 15:00 | 2016-05-17 13:00 | 17 | 0d | Administrador de Proyecto | 8h | 1,440 |
| 19 | 2.2.1.1.1.7 | Identificar requerimientos no funcionales |  | 4h | 2016-05-17 15:00 | 2016-05-17 19:00 | 18 | 0d | Administrador de Proyecto | 4h | 720 |
| 20 | 2.2.1.1.2 | **Especificacion** |  | 1d | 2016-05-18 09:00 | 2016-05-18 19:00 |  | 0d |  | 8h | 1,335 |
| 21 | 2.2.1.1.2.1 | Evaluacion de requerimentos |  | 2h | 2016-05-18 09:00 | 2016-05-18 11:00 | 19 | 0d | Administrador de Proyecto | 2h | 360 |
| 22 | 2.2.1.1.2.2 | SRS |  | 6h | 2016-05-18 11:00 | 2016-05-18 19:00 | 21 | 0d | Analista de Proyecto | 6h | 975 |
| 23 | 2.2.1.1.3 | **Gestión requerimientos** |  | 4.69d | 2016-05-12 18:00 | 2016-05-19 15:30 |  | 4.12d |  | 4.5h | 801.25 |
| 24 | 2.2.1.1.3.1 | Priorizar los requerimientos |  | 2h | 2016-05-19 09:00 | 2016-05-19 11:00 | 22 | 0d | Administrador de Proyecto | 2h | 360 |
| 25 | 2.2.1.1.3.2 | Alamcenar en repositorio |  | 0.5h | 2016-05-19 11:00 | 2016-05-19 11:30 | 24 | 0d | Analista de Proyecto | 0.5h | 81.25 |
| 26 | 2.2.1.1.3.3 | Asignar a los desarrolladores de software |  | 1h | 2016-05-19 11:30 | 2016-05-19 12:30 | 25 | 0d | Administrador de Proyecto | 1h | 180 |
| 27 | 2.2.1.1.3.4 | Administración de cambios de requerimientos |  | 0.5h | 2016-05-19 12:30 | 2016-05-19 13:00 | 26 | 0d | Administrador de Proyecto | 0.5h | 90 |
| 28 | 2.2.1.1.3.5 | Administración de la trazabilidad de requerimientos |  | 0.5h | 2016-05-19 15:00 | 2016-05-19 15:30 | 27 | 0d | Administrador de Proyecto | 0.5h | 90 |
| 29 | 2.2.1.1.3.6 | Entrega de lista de proveedores de requerimientos, procesos del sistema y SRS | milestone | 0d | 2016-05-12 18:00 | 2016-05-12 18:00 |  | 65.12d |  |  |  |

Notes:
- 2: Definir Actividades de ejecución de proyecto, duración de tiempos, definir fechas de inicio, fecha de fin, recursos, actividades sucesoras y predecesoras, hitos y revisiones.
- 3: Acta de constitución del proyecto en la cual el cliente se compromete con la información solicitada
- 4: Se comienza a elaborar el proyecto
- 5: Establecer metodo por el cual tendra comunicación el equipo
- 8: Formación del equipo de trabajo de acuerdo a las habilidades de cada uno
- 13: Fijar los proveedores de requerimientos, de donde obtendremos la información
- 14: Selleva acabo la valoración de los porveedores de requerimientos que serán lo adecuados para nuestro proyecto
- 15: Se define como se recolectaran los datos
- 16: Se especifican los tiempos en que se realizaran las reuniones
- 17: Se identificara con que procesos contará nuestro sistema
- 18: Se identifican los requerimientos funcionales que servirán para la elaboración de la aplicación
- 19: Se identifican los requerimientos no funcionales convenientes para el sistema
- 21: Llevar acabo la evaluación de los requerimientos obtenidos
- 22: Elaboración de la documentación de los requerimientos que se usarán
- 24: Valoración de los requerimientos viendo cuales son los más importantes de cumplir
- 25: Guardar y respalda toda la información en un repositorio para que este a la mano cuando sea necesario
- 26: Asignación de encargados a cada una de las tareas
- 27: Comenzar con el documento que gestionará los cambios que se puedan hacer a los requerimientos
- 28: Lleva un control de los requerimientos

| ID | WBS | Task | Type | Duration | Start | Finish | Predecessors | Total slack | Resources | Work | Cost |
| --- | --- | --- | --- | --- | --- | --- | --- | --- | --- | --- | --- |
| 30 | 2.2.1.2 | **Planificación** |  | 7.81d | 2016-05-12 18:00 | 2016-05-24 16:30 |  | 4.69d |  | 13h | 2,042.5 |
| 31 | 2.2.1.2.1 | Definicion del ciclo de vida |  | 0.5h | 2016-05-19 15:30 | 2016-05-19 16:00 | 28 | 0d | Administrador de Proyecto | 0.5h | 90 |
| 32 | 2.2.1.2.2 | Definicion de politicas |  | 0.5h | 2016-05-19 16:00 | 2016-05-19 16:30 | 31 | 0d | Administrador de Proyecto | 0.5h | 90 |
| 33 | 2.2.1.2.3 | Actualizar plan de proyecto |  | 2h | 2016-05-19 16:30 | 2016-05-19 18:30 | 32 | 0d | Administrador de Proyecto | 2h | 360 |
| 34 | 2.2.1.2.4 | Actualizar matriz de comunicación |  | 1h | 2016-05-19 18:30 | 2016-05-20 09:30 | 33 | 0d | Administrador de Proyecto | 1h | 180 |
| 35 | 2.2.1.2.5 | **Estimación** |  | 0.75d | 2016-05-20 09:30 | 2016-05-20 17:30 |  | 0d |  | 6h | 992.5 |
| 36 | 2.2.1.2.5.1 | Actualizar WBS/Calendario |  | 1h | 2016-05-20 09:30 | 2016-05-20 10:30 | 34 | 0d | Analista de Proyecto | 1h | 162.5 |
| 37 | 2.2.1.2.5.2 | Diccionario del WBS |  | 4h | 2016-05-20 10:30 | 2016-05-20 16:30 | 36 | 0d | Analista de Proyecto | 4h | 650 |
| 38 | 2.2.1.2.5.3 | Costos |  | 1h | 2016-05-20 16:30 | 2016-05-20 17:30 | 37 | 0d | Administrador de Proyecto | 1h | 180 |
| 39 | 2.2.1.2.6 | **Riesgos** |  | 1.5d | 2016-05-20 17:30 | 2016-05-24 11:30 |  | 0d |  |  |  |
| 40 | 2.2.1.2.6.1 | Identificación de riesgos |  | 6h | 2016-05-20 17:30 | 2016-05-23 15:30 | 38 | 0d |  |  |  |
| 41 | 2.2.1.2.6.2 | Asignación de prioridades |  | 2h | 2016-05-23 15:30 | 2016-05-23 17:30 | 40 | 0d |  |  |  |
| 42 | 2.2.1.2.6.3 | Plan de mitigación y contingencia |  | 4h | 2016-05-23 17:30 | 2016-05-24 11:30 | 41 | 0d |  |  |  |
| 43 | 2.2.1.2.7 | **Aseguramiento de la calidad** |  | 7.81d | 2016-05-12 18:00 | 2016-05-24 16:30 |  | 7.44d |  | 3h | 330 |
| 44 | 2.2.1.2.7.1 | Plan de gestión de la configuración |  | 2h | 2016-05-24 11:30 | 2016-05-24 15:30 | 42 | 0d | Administrador de Configuración | 2h | 220 |
| 45 | 2.2.1.2.7.2 | Junta de arranque de construcción |  | 1h | 2016-05-24 15:30 | 2016-05-24 16:30 | 44 | 0d | Administrador de Configuración | 1h | 110 |
| 46 | 2.2.1.2.7.3 | Entrega de ciclo de vida a utilizar, políticas,plan del proyecto, matriz de comunicación, diccionario del WBS, riesgos, prioridades de los riesgos, plan de mitigación y contingencia, plan de gestión de la configuración y junta de arranque de construcción. | milestone | 0d | 2016-05-12 18:00 | 2016-05-12 18:00 |  | 65.12d |  |  |  |
| 47 | 2.2.1.3 | **Diseño** |  | 2.62d | 2016-05-24 16:30 | 2016-05-27 11:30 |  | 0d |  | 21h | 2,887.5 |
| 48 | 2.2.1.3.1 | Diagrama de la Arquitectura |  | 2h | 2016-05-24 16:30 | 2016-05-24 18:30 | 45 | 0d | Diseñador | 2h | 275 |
| 49 | 2.2.1.3.2 | Diagrama de casos de uso |  | 4h | 2016-05-24 18:30 | 2016-05-25 12:30 | 48 | 0d | Diseñador | 4h | 550 |
| 50 | 2.2.1.3.3 | Diagrama de secuencia |  | 2h | 2016-05-25 12:30 | 2016-05-25 16:30 | 49 | 0d | Diseñador | 2h | 275 |
| 51 | 2.2.1.3.4 | Diagrama de clases |  | 1h | 2016-05-25 16:30 | 2016-05-25 17:30 | 50 | 0d | Diseñador | 1h | 137.5 |
| 52 | 2.2.1.3.5 | Diagrama de componentes |  | 1h | 2016-05-25 17:30 | 2016-05-25 18:30 | 51 | 0d | Diseñador | 1h | 137.5 |
| 53 | 2.2.1.3.6 | Diagrama de despliegue |  | 2h | 2016-05-25 18:30 | 2016-05-26 10:30 | 52 | 0d | Diseñador | 2h | 275 |
| 54 | 2.2.1.3.7 | Mapa de navegación |  | 1h | 2016-05-26 10:30 | 2016-05-26 11:30 | 53 | 0d | Diseñador | 1h | 137.5 |
| 55 | 2.2.1.3.8 | Maquetación |  | 6h | 2016-05-26 11:30 | 2016-05-27 09:30 | 54 | 0d | Diseñador | 6h | 825 |

Notes:
- 31: Llevar acabo la definición del ciclo de vida a utilizar
- 32: Definición de las politicas que habrá dentro del ambiente laboral
- 33: Se tendra actualizado el plan del proyecto conforme sea necesario
- 34: Actualización de la comunicación
- 36: Actualización del WBS
- 37: Se lleva acabo las redacción del diccionario del WBS
- 38: Establecimiento de los costos que tendrá el proyecto
- 40: Se identifican los posibles riesgos del proyecto
- 41: Se priorizan los riesgos
- 42: Se elabora un plan de mitigación y contingencia
- 44: Se elabora el plan de gestión de configuración. En esta parte es donde empieza a interactuar el administrador de la configuración
- 45: Se revisa que se tengan los productos necesarios para poder arrancar el sistema
- 48: Elaboración del diseño de la arquitectura de la aplicación
- 49: Realización de los diagramas de casos de uso
- 50: Realización de los diagramas de secuencia
- 51: Realización de los diagramas de clases
- 52: Realización de los diagramas de componentes
- 53: Realización de los diagramas de despliegues
- 54: Realización del mapa de navegación
- 55: Realizar la maquetación de la aplicación

| ID | WBS | Task | Type | Duration | Start | Finish | Predecessors | Total slack | Resources | Work | Cost |
| --- | --- | --- | --- | --- | --- | --- | --- | --- | --- | --- | --- |
| 56 | 2.2.1.3.9 | **Diagramas BD** |  | 0.25d | 2016-05-27 09:30 | 2016-05-27 11:30 | 55 | 0d |  | 2h | 275 |
| 57 | 2.2.1.3.9.1 | Diagrama E-R |  | 1h | 2016-05-27 09:30 | 2016-05-27 10:30 |  | 0d | Diseñador | 1h | 137.5 |
| 58 | 2.2.1.3.9.2 | Diagrama Relacional |  | 1h | 2016-05-27 10:30 | 2016-05-27 11:30 | 57 | 0d | Diseñador | 1h | 137.5 |
| 59 | 2.2.1.3.9.3 | Entrega de la arquitectura del sistema, casos de uso, secuencia, clases, componentes, despliegues, mapa de navegación y maquetación. | milestone | 0d | 2016-05-27 09:30 | 2016-05-27 09:30 |  | 54.94d |  |  |  |
| 60 | 2.2.1.4 | **Codificación** |  | 11.75d? | 2016-05-27 11:30 | 2016-06-14 09:30 | 58 | 0d |  | 94h | 11,280 |
| 61 | 2.2.1.4.1 | Codificaciòn de la base de datos |  | 3h | 2016-05-27 11:30 | 2016-05-27 16:30 |  | 0d | Programado | 3h | 360 |
| 62 | 2.2.1.4.2 | **Mòdulo de Alumnos** |  | 1.56d | 2016-05-27 16:30 | 2016-05-31 11:00 | 61 | 0d |  | 12.5h | 1,500 |
| 63 | 2.2.1.4.2.1 | Interfaz |  | 1h | 2016-05-27 16:30 | 2016-05-27 17:30 |  | 0d | Programado | 1h | 120 |
| 64 | 2.2.1.4.2.2 | Clases de Alumnos |  | 6h | 2016-05-27 17:30 | 2016-05-30 15:30 | 63 | 0d | Programado | 6h | 720 |
| 65 | 2.2.1.4.2.3 | Conexion a BD |  | 0.5h | 2016-05-30 15:30 | 2016-05-30 16:00 | 64 | 0d | Programado | 0.5h | 60 |
| 66 | 2.2.1.4.2.4 | Alta de Alumnos |  | 0.5h | 2016-05-30 16:00 | 2016-05-30 16:30 | 65 | 0d | Programado | 0.5h | 60 |
| 67 | 2.2.1.4.2.5 | Baja de Alumnos |  | 0.5h | 2016-05-30 16:30 | 2016-05-30 17:00 | 66 | 0d | Programado | 0.5h | 60 |
| 68 | 2.2.1.4.2.6 | Actualizaciòn de Alumnos |  | 1h | 2016-05-30 17:00 | 2016-05-30 18:00 | 67 | 0d | Programado | 1h | 120 |
| 69 | 2.2.1.4.2.7 | Consulta de Alumnos |  | 1h | 2016-05-30 18:00 | 2016-05-30 19:00 | 68 | 0d | Programado | 1h | 120 |
| 70 | 2.2.1.4.2.8 | Reportes de Alumnos |  | 2h | 2016-05-31 09:00 | 2016-05-31 11:00 | 69 | 0d | Programado | 2h | 240 |
| 71 | 2.2.1.4.3 | **Mòdulo de Tutores** |  | 1.56d | 2016-05-31 11:00 | 2016-06-01 17:30 | 70 | 0d |  | 12.5h | 1,500 |
| 72 | 2.2.1.4.3.1 | Interfaz |  | 1h | 2016-05-31 11:00 | 2016-05-31 12:00 |  | 0d | Programado | 1h | 120 |
| 73 | 2.2.1.4.3.2 | Clases de Tutores |  | 6h | 2016-05-31 12:00 | 2016-06-01 10:00 | 72 | 0d | Programado | 6h | 720 |
| 74 | 2.2.1.4.3.3 | Conexion a BD |  | 0.5h | 2016-06-01 10:00 | 2016-06-01 10:30 | 73 | 0d | Programado | 0.5h | 60 |
| 75 | 2.2.1.4.3.4 | Alta de Tutores |  | 0.5h | 2016-06-01 10:30 | 2016-06-01 11:00 | 74 | 0d | Programado | 0.5h | 60 |
| 76 | 2.2.1.4.3.5 | Baja de Tutores |  | 0.5h | 2016-06-01 11:00 | 2016-06-01 11:30 | 75 | 0d | Programado | 0.5h | 60 |
| 77 | 2.2.1.4.3.6 | Actualizaciòn de Tutores |  | 1h | 2016-06-01 11:30 | 2016-06-01 12:30 | 76 | 0d | Programado | 1h | 120 |
| 78 | 2.2.1.4.3.7 | Consulta de Tutores |  | 1h | 2016-06-01 12:30 | 2016-06-01 15:30 | 77 | 0d | Programado | 1h | 120 |
| 79 | 2.2.1.4.3.8 | Reportes de Tutores |  | 2h | 2016-06-01 15:30 | 2016-06-01 17:30 | 78 | 0d | Programado | 2h | 240 |

Notes:
- 57: Realizar el diseño de modelo de entidad relación
- 58: Realiza el modelo relacional
- 61: Arranca la codificación de la base de datos
- 63: Realización de la interfaz del módulo de alumnos
- 64: Realización de las clases de los alumnos
- 65: Realización de la conexión a la base de datos
- 66: Realización de la codificación del alta a la tabla de alumnos
- 67: Realización de la codificación de la baja en la tabla de alumnos
- 68: Realización de la codificación de la actualización a la tabla de alumnos
- 69: Realización de las consultas correspondientes a la tabla alumnos
- 70: Realización del reporte de la tabla alumnos
- 72: Realización de la interfaz del módulo de tutores
- 73: Realización de las clases de los tutores
- 74: Realización de la conexión a la base de datos
- 75: Realización de la codificación del alta a la tabla de tutores
- 76: Realización de la codificación de la baja en la tabla de tutores
- 77: Realización de la codificación de la actualización a la tabla de tutores
- 78: Realización de las consultas correspondientes a la tabla tutores
- 79: Realización del reporte de la tabla tutores

| ID | WBS | Task | Duration | Start | Finish | Predecessors | Total slack | Resources | Work | Cost |
| --- | --- | --- | --- | --- | --- | --- | --- | --- | --- | --- |
| 80 | 2.2.1.4.4 | **Mòdulo de Canalizaciones** | 1.56d | 2016-06-01 17:30 | 2016-06-03 12:00 | 79 | 0d |  | 12.5h | 1,500 |
| 81 | 2.2.1.4.4.1 | Interfaz | 1h | 2016-06-01 17:30 | 2016-06-01 18:30 |  | 0d | Programado | 1h | 120 |
| 82 | 2.2.1.4.4.2 | Clases de Canalizaciones | 6h | 2016-06-01 18:30 | 2016-06-02 16:30 | 81 | 0d | Programado | 6h | 720 |
| 83 | 2.2.1.4.4.3 | Conexion a BD | 0.5h | 2016-06-02 16:30 | 2016-06-02 17:00 | 82 | 0d | Programado | 0.5h | 60 |
| 84 | 2.2.1.4.4.4 | Alta de Canalizaciones | 0.5h | 2016-06-02 17:00 | 2016-06-02 17:30 | 83 | 0d | Programado | 0.5h | 60 |
| 85 | 2.2.1.4.4.5 | Baja de Canalizaciones | 0.5h | 2016-06-02 17:30 | 2016-06-02 18:00 | 84 | 0d | Programado | 0.5h | 60 |
| 86 | 2.2.1.4.4.6 | Actualizaciòn de Canalizaciones | 1h | 2016-06-02 18:00 | 2016-06-02 19:00 | 85 | 0d | Programado | 1h | 120 |
| 87 | 2.2.1.4.4.7 | Consulta de Canalizaciones | 1h | 2016-06-03 09:00 | 2016-06-03 10:00 | 86 | 0d | Programado | 1h | 120 |
| 88 | 2.2.1.4.4.8 | Reportes de Canalizaciones | 2h | 2016-06-03 10:00 | 2016-06-03 12:00 | 87 | 0d | Programado | 2h | 240 |
| 89 | 2.2.1.4.5 | **Mòdulo de CanalizaciònGrupal** | 1.56d | 2016-06-03 12:00 | 2016-06-06 18:30 | 88 | 0d |  | 12.5h | 1,500 |
| 90 | 2.2.1.4.5.1 | Interfaz | 1h | 2016-06-03 12:00 | 2016-06-03 13:00 |  | 0d | Programado | 1h | 120 |
| 91 | 2.2.1.4.5.2 | Clases de CanalizaciònGrupal | 6h | 2016-06-03 15:00 | 2016-06-06 11:00 | 90 | 0d | Programado | 6h | 720 |
| 92 | 2.2.1.4.5.3 | Conexion a BD | 0.5h | 2016-06-06 11:00 | 2016-06-06 11:30 | 91 | 0d | Programado | 0.5h | 60 |
| 93 | 2.2.1.4.5.4 | Alta de CanalizaciònGrupal | 0.5h | 2016-06-06 11:30 | 2016-06-06 12:00 | 92 | 0d | Programado | 0.5h | 60 |
| 94 | 2.2.1.4.5.5 | Baja de CanalizaciònGrupal | 0.5h | 2016-06-06 12:00 | 2016-06-06 12:30 | 93 | 0d | Programado | 0.5h | 60 |
| 95 | 2.2.1.4.5.6 | Actualizaciòn de CanalizaciònGrupal | 1h | 2016-06-06 12:30 | 2016-06-06 15:30 | 94 | 0d | Programado | 1h | 120 |
| 96 | 2.2.1.4.5.7 | Consulta de CanalizaciònGrupal | 1h | 2016-06-06 15:30 | 2016-06-06 16:30 | 95 | 0d | Programado | 1h | 120 |
| 97 | 2.2.1.4.5.8 | Reportes de CanalizaciònGrupal | 2h | 2016-06-06 16:30 | 2016-06-06 18:30 | 96 | 0d | Programado | 2h | 240 |
| 98 | 2.2.1.4.6 | **Mòdulo de Asesorìa** | 1.56d | 2016-06-06 18:30 | 2016-06-08 13:00 | 97 | 0d |  | 12.5h | 1,500 |
| 99 | 2.2.1.4.6.1 | Interfaz | 1h | 2016-06-06 18:30 | 2016-06-07 09:30 |  | 0d | Programado | 1h | 120 |
| 100 | 2.2.1.4.6.2 | Clases de Asesorìa | 6h | 2016-06-07 09:30 | 2016-06-07 17:30 | 99 | 0d | Programado | 6h | 720 |
| 101 | 2.2.1.4.6.3 | Conexion a BD | 0.5h | 2016-06-07 17:30 | 2016-06-07 18:00 | 100 | 0d | Programado | 0.5h | 60 |
| 102 | 2.2.1.4.6.4 | Alta de Asesorìa | 0.5h | 2016-06-07 18:00 | 2016-06-07 18:30 | 101 | 0d | Programado | 0.5h | 60 |
| 103 | 2.2.1.4.6.5 | Baja de Asesorìa | 0.5h | 2016-06-07 18:30 | 2016-06-07 19:00 | 102 | 0d | Programado | 0.5h | 60 |
| 104 | 2.2.1.4.6.6 | Actualizaciòn de Asesorìa | 1h | 2016-06-08 09:00 | 2016-06-08 10:00 | 103 | 0d | Programado | 1h | 120 |
| 105 | 2.2.1.4.6.7 | Consulta de Asesorìa | 1h | 2016-06-08 10:00 | 2016-06-08 11:00 | 104 | 0d | Programado | 1h | 120 |
| 106 | 2.2.1.4.6.8 | Reportes de Asesorìa | 2h | 2016-06-08 11:00 | 2016-06-08 13:00 | 105 | 0d | Programado | 2h | 240 |

Notes:
- 81: Realización de la interfaz del módulo de canalizaciones
- 82: Realización de las clases de los canalizaciones
- 83: Realización de la conexión a la base de datos
- 84: Realización de la codificación del alta a la tabla de canalizaciones
- 85: Realización de la codificación de la baja en la tabla de canalizaciones
- 86: Realización de la codificación de la actualización a la tabla de canalizaciones
- 87: Realización de las consultas correspondientes a la tabla canalizaciones
- 88: Realización del reporte de la tabla canalizaciones
- 90: Realización de la interfaz del módulo de canalizaciones grupales
- 91: Realización de las clases de los canalizaciones grupales
- 92: Realización de la conexión a la base de datos
- 93: Realización de la codificación del alta a la tabla de canalizaciones grupales
- 94: Realización de la codificación de la baja en la tabla de canalizaciones grupales
- 95: Realización de la codificación de la actualización a la tabla de canalizaciones grupales
- 96: Realización de las consultas correspondientes a la tabla canalizaciones grupales
- 97: Realización del reporte de la tabla canalizaciones grupales
- 99: Realización de la interfaz del módulo de asesoría
- 100: Realización de las clases de los asesoría
- 101: Realización de la conexión a la base de datos
- 102: Realización de la codificación del alta a la tabla de asesoría
- 103: Realización de la codificación de la baja en la tabla de asesoría
- 104: Realización de la codificación de la actualización a la tabla de asesoría
- 105: Realización de las consultas correspondientes a la tabla asesoría
- 106: Realización del reporte de la tabla asesoría

| ID | WBS | Task | Type | Duration | Start | Finish | Predecessors | Total slack | Resources | Work | Cost |
| --- | --- | --- | --- | --- | --- | --- | --- | --- | --- | --- | --- |
| 107 | 2.2.1.4.7 | **Mòdulo de Grupos** |  | 1.56d | 2016-06-08 15:00 | 2016-06-10 09:30 | 106 | 0d |  | 12.5h | 1,500 |
| 108 | 2.2.1.4.7.1 | Interfaz |  | 1h | 2016-06-08 15:00 | 2016-06-08 16:00 |  | 0d | Programado | 1h | 120 |
| 109 | 2.2.1.4.7.2 | Clases de Grupos |  | 6h | 2016-06-08 16:00 | 2016-06-09 12:00 | 108 | 0d | Programado | 6h | 720 |
| 110 | 2.2.1.4.7.3 | Conexion a BD |  | 0.5h | 2016-06-09 12:00 | 2016-06-09 12:30 | 109 | 0d | Programado | 0.5h | 60 |
| 111 | 2.2.1.4.7.4 | Alta de Grupos |  | 0.5h | 2016-06-09 12:30 | 2016-06-09 13:00 | 110 | 0d | Programado | 0.5h | 60 |
| 112 | 2.2.1.4.7.5 | Baja de Grupos |  | 0.5h | 2016-06-09 15:00 | 2016-06-09 15:30 | 111 | 0d | Programado | 0.5h | 60 |
| 113 | 2.2.1.4.7.6 | Actualizaciòn de Grupos |  | 1h | 2016-06-09 15:30 | 2016-06-09 16:30 | 112 | 0d | Programado | 1h | 120 |
| 114 | 2.2.1.4.7.7 | Consulta de Grupos |  | 1h | 2016-06-09 16:30 | 2016-06-09 17:30 | 113 | 0d | Programado | 1h | 120 |
| 115 | 2.2.1.4.7.8 | Reportes de Grupos |  | 2h | 2016-06-09 17:30 | 2016-06-10 09:30 | 114 | 0d | Programado | 2h | 240 |
| 116 | 2.2.1.4.8 | **Login** |  | 2d? | 2016-06-10 09:30 | 2016-06-14 09:30 | 115 | 0d |  | 16h | 1,920 |
| 117 | 2.2.1.4.8.1 | Interfaz |  | 1d? | 2016-06-10 09:30 | 2016-06-13 09:30 |  | 0d | Programado | 8h | 960 |
| 118 | 2.2.1.4.8.2 | Validación |  | 1d? | 2016-06-13 09:30 | 2016-06-14 09:30 | 117 | 0d | Programado | 8h | 960 |
| 119 | 2.2.1.4.8.3 | Entrega de base de datos, reporte de módulo clientes, productos, ventas, categoría, proveedores y login. | milestone | 0d | 2016-06-10 09:30 | 2016-06-10 09:30 |  | 44.94d |  |  |  |
| 120 | 2.2.1.5 | **Pruebas** |  | 3.81d | 2016-06-14 09:30 | 2016-06-17 18:00 | 118 | 0d |  | 30.5h | 3,507.5 |
| 121 | 2.2.1.5.1 | **Pruebas de caja blanca** |  | 3.81d | 2016-06-14 09:30 | 2016-06-17 18:00 |  | 0d |  | 30.5h | 3,507.5 |
| 122 | 2.2.1.5.1.1 | **Mòdulo de Alumnos** |  | 0.31d | 2016-06-14 09:30 | 2016-06-14 12:00 |  | 0d |  | 2.5h | 287.5 |
| 123 | 2.2.1.5.1.1.1 | Pruebas Unitarias |  | 1.5h | 2016-06-14 09:30 | 2016-06-14 11:00 |  | 0d | Tester | 1.5h | 172.5 |
| 124 | 2.2.1.5.1.1.2 | Pruebas de Modulo |  | 1h | 2016-06-14 11:00 | 2016-06-14 12:00 | 123 | 0d | Tester | 1h | 115 |
| 125 | 2.2.1.5.1.2 | **Mòdulo de Tutores** |  | 0.31d | 2016-06-14 12:00 | 2016-06-14 16:30 | 124 | 0d |  | 2.5h | 287.5 |
| 126 | 2.2.1.5.1.2.1 | Pruebas Unitarias |  | 1.5h | 2016-06-14 12:00 | 2016-06-14 15:30 |  | 0d | Tester | 1.5h | 172.5 |
| 127 | 2.2.1.5.1.2.2 | Pruebas de Modulo |  | 1h | 2016-06-14 15:30 | 2016-06-14 16:30 | 126 | 0d | Tester | 1h | 115 |
| 128 | 2.2.1.5.1.3 | **Mòdulo de Canalizaciones** |  | 0.31d | 2016-06-14 16:30 | 2016-06-14 19:00 | 127 | 0d |  | 2.5h | 287.5 |
| 129 | 2.2.1.5.1.3.1 | Pruebas Unitarias |  | 1.5h | 2016-06-14 16:30 | 2016-06-14 18:00 |  | 0d | Tester | 1.5h | 172.5 |
| 130 | 2.2.1.5.1.3.2 | Pruebas de Modulo |  | 1h | 2016-06-14 18:00 | 2016-06-14 19:00 | 129 | 0d | Tester | 1h | 115 |

Notes:
- 108: Realización de la interfaz del módulo de grupos
- 109: Realización de las clases de los grupos
- 110: Realización de la conexión a la base de datos
- 111: Realización de la codificación del alta a la tabla de grupos
- 112: Realización de la codificación de la baja en la tabla de grupos
- 113: Realización de la codificación de la actualización a la tabla de grupos
- 114: Realización de las consultas correspondientes a la tabla grupos
- 115: Realización del reporte de la tabla grupos
- 117: Realización de la interfaz del login
- 118: Validanción de los campos de los formularios del login
- 123: Realización de las pruebas unitarias al módulo alumnos
- 124: Realización de pruebas de módulo a la tabla alumnos
- 126: Realización de las pruebas unitarias al módulo tutores
- 127: Realización de pruebas de módulo a la tabla tutores
- 129: Realización de las pruebas unitarias al módulo canalizaciones
- 130: Realización de pruebas de módulo a la tabla canalizaciones

| ID | WBS | Task | Type | Duration | Start | Finish | Predecessors | Total slack | Free slack | Resources | Work | Cost |
| --- | --- | --- | --- | --- | --- | --- | --- | --- | --- | --- | --- | --- |
| 131 | 2.2.1.5.1.4 | **Mòdulo de CanalizaciònGrupal** |  | 0.31d | 2016-06-15 09:00 | 2016-06-15 11:30 | 130 | 0d |  |  | 2.5h | 287.5 |
| 132 | 2.2.1.5.1.4.1 | Pruebas Unitarias |  | 1.5h | 2016-06-15 09:00 | 2016-06-15 10:30 |  | 0d |  | Tester | 1.5h | 172.5 |
| 133 | 2.2.1.5.1.4.2 | Pruebas de Modulo |  | 1h | 2016-06-15 10:30 | 2016-06-15 11:30 | 132 | 0d |  | Tester | 1h | 115 |
| 134 | 2.2.1.5.1.5 | **Mòdulo de Grupos** |  | 0.31d | 2016-06-15 11:30 | 2016-06-15 16:00 | 133 | 0d |  |  | 2.5h | 287.5 |
| 135 | 2.2.1.5.1.5.1 | Pruebas Unitarias |  | 1.5h | 2016-06-15 11:30 | 2016-06-15 13:00 |  | 0d |  | Tester | 1.5h | 172.5 |
| 136 | 2.2.1.5.1.5.2 | Pruebas de Modulo |  | 1h | 2016-06-15 15:00 | 2016-06-15 16:00 | 135 | 0d |  | Tester | 1h | 115 |
| 137 | 2.2.1.5.1.6 | **Login** |  | 2.25d | 2016-06-15 16:00 | 2016-06-17 18:00 | 136 | 0d |  |  | 18h | 2,070 |
| 138 | 2.2.1.5.1.6.1 | Pruebas de stress |  | 4h | 2016-06-15 16:00 | 2016-06-16 10:00 |  | 0d |  | Tester | 4h | 460 |
| 139 | 2.2.1.5.1.6.2 | Pruebas de carga |  | 6h | 2016-06-16 10:00 | 2016-06-16 18:00 | 138 | 0d |  | Tester | 6h | 690 |
| 140 | 2.2.1.5.1.6.3 | Pruebas del sistema |  | 8h | 2016-06-16 18:00 | 2016-06-17 18:00 | 139 | 0d |  | Tester | 8h | 920 |
| 141 | 2.2.1.5.1.6.4 | Entrega de resultados de pruebas de módulo de clientes, productos, ventas, categoría, proveedores y login. | milestone | 0d | 2016-06-15 16:00 | 2016-06-15 16:00 |  | 41.38d |  |  |  |  |
| 142 | 2.2.2 | **FaseDos/IteraciónDos** |  | 17.44d | 2016-06-17 18:00 | 2016-07-13 11:30 | 140 | 0d |  |  | 139.5h | 19,841.25 |
| 143 | 2.2.2.1 | **Análisis** |  | 3.94d | 2016-06-17 18:00 | 2016-06-23 17:30 |  | 0d |  |  | 31.5h | 5,661.25 |
| 144 | 2.2.2.1.1 | **Elicitación** |  | 2.5d | 2016-06-17 18:00 | 2016-06-22 12:00 |  | 0d |  |  | 20h | 3,600 |
| 145 | 2.2.2.1.1.1 | Identificar procesos del sistema |  | 8h | 2016-06-17 18:00 | 2016-06-20 18:00 |  | 0d |  | Administrador de Proyecto | 8h | 1,440 |
| 146 | 2.2.2.1.1.2 | Identificar requerimientos funcionales |  | 8h | 2016-06-20 18:00 | 2016-06-21 18:00 | 145 | 0d |  | Administrador de Proyecto | 8h | 1,440 |
| 147 | 2.2.2.1.1.3 | Identificar requerimientos no funcionales |  | 4h | 2016-06-21 18:00 | 2016-06-22 12:00 | 146 | 0d |  | Administrador de Proyecto | 4h | 720 |
| 148 | 2.2.2.1.2 | **Especificación** |  | 1d | 2016-06-22 12:00 | 2016-06-23 12:00 |  | 0d |  |  | 8h | 1,440 |
| 149 | 2.2.2.1.2.1 | Evaluación de requerimientos |  | 2h | 2016-06-22 12:00 | 2016-06-22 16:00 | 147 | 0d |  | Administrador de Proyecto | 2h | 360 |
| 150 | 2.2.2.1.2.2 | SRS |  | 6h | 2016-06-22 16:00 | 2016-06-23 12:00 | 149 | 0d |  | Administrador de Proyecto | 6h | 1,080 |
| 151 | 2.2.2.1.3 | **Gestión de requerimientos** |  | 0.44d | 2016-06-23 12:00 | 2016-06-23 17:30 | 150 | 0d |  |  | 3.5h | 621.25 |
| 152 | 2.2.2.1.3.1 | Priorizar los requerimientos |  | 2h | 2016-06-23 12:00 | 2016-06-23 16:00 |  | 18.25d | 0d | Administrador de Proyecto | 2h | 360 |
| 153 | 2.2.2.1.3.2 | Almacenar en repositorio |  | 0.5h | 2016-06-23 16:00 | 2016-06-23 16:30 | 152 | 18.25d | 0d | Analista de Proyecto | 0.5h | 81.25 |
| 154 | 2.2.2.1.3.3 | Asignar a desarrolladores de software |  | 1h | 2016-06-23 16:30 | 2016-06-23 17:30 | 153 | 18.25d | 0d | Administrador de Proyecto | 1h | 180 |
| 155 | 2.2.2.1.3.4 | Entrega de procesos del sistema y SRS | milestone, manual | 0d | 2016-06-23 12:00 | 2016-06-23 12:00 |  |  |  |  |  |  |

Notes:
- 132: Realización de las pruebas unitarias al módulo canalización grupal
- 133: Realización de pruebas de módulo a la tabla canalización grupal
- 135: Realización de las pruebas unitarias al módulo grupos
- 136: Realización de pruebas de módulo a la tabla grupos
- 138: Realización de las pruebas de stress a login
- 139: Realización de las pruebas de carga a login
- 140: Realización de las pruebas de sistemas a los modulos
- 145: Identificar los nuevos procesos que deberá tener el sistema
- 146: Identificar los nuevos requerimientos funcionales o modificar algunos si es necesario
- 147: Identificar los nuevos requerimientos no funcionales o se modifican algunos si es necesario
- 149: Evaluar los nuevos requerimientos
- 150: Actualizar el SRS
- 152: Priorizar los nuevos requerimientos
- 153: Realizar una copia de respaldo en el repositorio
- 154: Asignar los nuevos encargados de las tareas

| ID | WBS | Task | Type | Duration | Start | Finish | Predecessors | Total slack | Free slack | Resources | Work | Cost |
| --- | --- | --- | --- | --- | --- | --- | --- | --- | --- | --- | --- | --- |
| 156 | 2.2.2.2 | **Planificación** |  | 2.12d | 2016-06-23 17:30 | 2016-06-27 18:30 | 154 | 18.25d |  |  | 17h | 3,042.5 |
| 157 | 2.2.2.2.1 | Actualizar plan de proyecto |  | 2h | 2016-06-23 17:30 | 2016-06-24 09:30 |  | 18.25d | 0d | Administrador de Proyecto | 2h | 360 |
| 158 | 2.2.2.2.2 | **Estimación** |  | 0.25d | 2016-06-24 09:30 | 2016-06-24 11:30 | 157 | 18.25d |  |  | 2h | 342.5 |
| 159 | 2.2.2.2.2.1 | Actualizar diccionario del WBS |  | 1h | 2016-06-24 09:30 | 2016-06-24 10:30 |  | 18.25d | 0d | Analista de Proyecto | 1h | 162.5 |
| 160 | 2.2.2.2.2.2 | Actualizar costos |  | 1h | 2016-06-24 10:30 | 2016-06-24 11:30 | 159 | 18.25d | 0d | Administrador de Proyecto | 1h | 180 |
| 161 | 2.2.2.2.3 | **Riesgos** |  | 1.62d | 2016-06-24 11:30 | 2016-06-27 18:30 | 160 | 18.25d |  |  | 13h | 2,340 |
| 162 | 2.2.2.2.3.1 | Identificación de nuevos riesgos |  | 6h | 2016-06-24 11:30 | 2016-06-27 09:30 |  | 18.25d | 0d | Administrador de Proyecto | 6h | 1,080 |
| 163 | 2.2.2.2.3.2 | Asignación de prioridades |  | 2h | 2016-06-27 09:30 | 2016-06-27 11:30 | 162 | 18.25d | 0d | Administrador de Proyecto | 2h | 360 |
| 164 | 2.2.2.2.3.3 | Plan de mitigación y contingencia |  | 4h | 2016-06-27 11:30 | 2016-06-27 17:30 | 163 | 18.25d | 0d | Administrador de Proyecto | 4h | 720 |
| 165 | 2.2.2.2.3.4 | **Aseguramiento de la calidad** |  | 0.12d | 2016-06-27 17:30 | 2016-06-27 18:30 | 164 | 18.25d |  |  | 1h | 180 |
| 166 | 2.2.2.2.3.4.1 | Junta de arranque de construcción |  | 1h | 2016-06-27 17:30 | 2016-06-27 18:30 |  | 18.25d | 0d | Administrador de Proyecto | 1h | 180 |
| 167 | 2.2.2.2.3.4.2 | Entrega del nuevo plan del proyecto, actualización del WBS, nuevos riesgos, prioridades de los riesgos, nuevo plan de mitigación y contingencia y junta de arranque de construcción | milestone | 0d | 2016-06-27 17:30 | 2016-06-27 17:30 |  | 33.19d |  |  |  |  |
| 168 | 2.2.2.3 | **Diseño** |  | 2d | 2016-06-27 18:30 | 2016-06-29 18:30 | 166 | 18.25d |  |  | 16h | 2,200 |
| 169 | 2.2.2.3.1 | Diagramas de caso de uso |  | 4h | 2016-06-27 18:30 | 2016-06-28 12:30 |  | 18.25d | 0d | Diseñador | 4h | 550 |
| 170 | 2.2.2.3.2 | Diagramas de secuencia |  | 2h | 2016-06-28 12:30 | 2016-06-28 16:30 | 169 | 18.25d | 0d | Diseñador | 2h | 275 |
| 171 | 2.2.2.3.3 | Actualizar diagramas de componentes |  | 1h | 2016-06-28 16:30 | 2016-06-28 17:30 | 170 | 18.25d | 0d | Diseñador | 1h | 137.5 |
| 172 | 2.2.2.3.4 | Diagramas de despliegues |  | 2h | 2016-06-28 17:30 | 2016-06-29 09:30 | 171 | 18.25d | 0d | Diseñador | 2h | 275 |
| 173 | 2.2.2.3.5 | Mapa de navegación |  | 1h | 2016-06-29 09:30 | 2016-06-29 10:30 | 172 | 18.25d | 0d | Diseñador | 1h | 137.5 |
| 174 | 2.2.2.3.6 | Maquetación |  | 6h | 2016-06-29 10:30 | 2016-06-29 18:30 | 173 | 18.25d | 0d | Diseñador | 6h | 825 |
| 175 | 2.2.2.3.7 | Entrega de nuevos casos de uso, de secuencia, componentes, despliegues del mapa de navegación y de la maquetación | milestone | 0d | 2016-06-27 18:30 | 2016-06-27 18:30 |  | 33.06d |  |  |  |  |
| 176 | 2.2.2.4 | **Codificación** |  | 7.81d | 2016-06-29 18:30 | 2016-07-11 17:00 | 174 | 18.25d |  |  | 62.5h | 7,500 |
| 177 | 2.2.2.4.1 | **Mòdulo de Generaciones** |  | 1.56d | 2016-06-29 18:30 | 2016-07-01 13:00 |  | 18.25d |  |  | 12.5h | 1,500 |
| 178 | 2.2.2.4.1.1 | Interfaz |  | 1h | 2016-06-29 18:30 | 2016-06-30 09:30 |  | 18.25d | 0d | Programado | 1h | 120 |
| 179 | 2.2.2.4.1.2 | Clases de Generaciones |  | 6h | 2016-06-30 09:30 | 2016-06-30 17:30 | 178 | 18.25d | 0d | Programado | 6h | 720 |
| 180 | 2.2.2.4.1.3 | Conexion a BD |  | 0.5h | 2016-06-30 17:30 | 2016-06-30 18:00 | 179 | 18.25d | 0d | Programado | 0.5h | 60 |
| 181 | 2.2.2.4.1.4 | Alta de Generaciones |  | 0.5h | 2016-06-30 18:00 | 2016-06-30 18:30 | 180 | 18.25d | 0d | Programado | 0.5h | 60 |
| 182 | 2.2.2.4.1.5 | Baja de Generaciones |  | 0.5h | 2016-06-30 18:30 | 2016-06-30 19:00 | 181 | 18.25d | 0d | Programado | 0.5h | 60 |
| 183 | 2.2.2.4.1.6 | Actualizaciòn de Generaciones |  | 1h | 2016-07-01 09:00 | 2016-07-01 10:00 | 182 | 18.25d | 0d | Programado | 1h | 120 |
| 184 | 2.2.2.4.1.7 | Consulta de Generaciones |  | 1h | 2016-07-01 10:00 | 2016-07-01 11:00 | 183 | 18.25d | 0d | Programado | 1h | 120 |
| 185 | 2.2.2.4.1.8 | Reportes de Generaciones |  | 2h | 2016-07-01 11:00 | 2016-07-01 13:00 | 184 | 18.25d | 0d | Programado | 2h | 240 |

Notes:
- 157: Actualizar el nuevo plan del proyecto
- 159: Actualización el diccionario WBS si es necesario
- 160: Actualización de los costos
- 162: Identificación de los nuevos riegos o actualizar los que ya se tenían
- 163: Asignación de prioridades a los nuevos riegos
- 164: Realizar un nuevo plan de mitigación y contingencia
- 166: Revisión de los productos necesarios para arrancar el sistema
- 169: Elaboración de los nuevos casos de uso
- 170: Elaboración de los nuevos diagrmas de secuencia
- 171: Actualización del diagrama de componentes
- 172: Elaboración del nuevo diagrama de despliegues
- 173: Elaboración del nuevo mapa de navegación
- 174: Elaboración de nueva maquetación
- 178: Realización de la interfaz del módulo de generaciones
- 179: Realización de las clases de los generaciones
- 180: Realización de la conexión a la base de datos
- 181: Realización de la codificación del alta a la tabla de generaciones
- 182: Realización de la codificación de la baja en la tabla de generaciones
- 183: Realización de la codificación de la actualización a la tabla de generaciones
- 184: Realización de las consultas correspondientes a la tabla generaciones
- 185: Realización del reporte de la tabla generaciones

| ID | WBS | Task | Duration | Start | Finish | Predecessors | Total slack | Free slack | Resources | Work | Cost |
| --- | --- | --- | --- | --- | --- | --- | --- | --- | --- | --- | --- |
| 186 | 2.2.2.4.2 | **Mòdulo HistorialAcadèmico** | 1.56d | 2016-07-01 15:00 | 2016-07-05 09:30 | 185 | 18.25d |  |  | 12.5h | 1,500 |
| 187 | 2.2.2.4.2.1 | Interfaz | 1h | 2016-07-01 15:00 | 2016-07-01 16:00 |  | 18.25d | 0d | Programado | 1h | 120 |
| 188 | 2.2.2.4.2.2 | Clases de HistorialAcadèmico | 6h | 2016-07-01 16:00 | 2016-07-04 12:00 | 187 | 18.25d | 0d | Programado | 6h | 720 |
| 189 | 2.2.2.4.2.3 | Conexion a BD | 0.5h | 2016-07-04 12:00 | 2016-07-04 12:30 | 188 | 18.25d | 0d | Programado | 0.5h | 60 |
| 190 | 2.2.2.4.2.4 | Alta de HistorialAcadèmico | 0.5h | 2016-07-04 12:30 | 2016-07-04 13:00 | 189 | 18.25d | 0d | Programado | 0.5h | 60 |
| 191 | 2.2.2.4.2.5 | Baja de HistorialAcadèmico | 0.5h | 2016-07-04 15:00 | 2016-07-04 15:30 | 190 | 18.25d | 0d | Programado | 0.5h | 60 |
| 192 | 2.2.2.4.2.6 | Actualizaciòn de HistorialAcadèmico | 1h | 2016-07-04 15:30 | 2016-07-04 16:30 | 191 | 18.25d | 0d | Programado | 1h | 120 |
| 193 | 2.2.2.4.2.7 | Consulta de HistorialAcadèmico | 1h | 2016-07-04 16:30 | 2016-07-04 17:30 | 192 | 18.25d | 0d | Programado | 1h | 120 |
| 194 | 2.2.2.4.2.8 | Reportes de HistorialAcadèmico | 2h | 2016-07-04 17:30 | 2016-07-05 09:30 | 193 | 18.25d | 0d | Programado | 2h | 240 |
| 195 | 2.2.2.4.3 | **Mòdulo HistorialMèdico** | 1.56d | 2016-07-05 09:30 | 2016-07-06 16:00 | 194 | 18.25d |  |  | 12.5h | 1,500 |
| 196 | 2.2.2.4.3.1 | Interfaz | 1h | 2016-07-05 09:30 | 2016-07-05 10:30 |  | 18.25d | 0d | Programado | 1h | 120 |
| 197 | 2.2.2.4.3.2 | Clases de HistorialMèdico | 6h | 2016-07-05 10:30 | 2016-07-05 18:30 | 196 | 18.25d | 0d | Programado | 6h | 720 |
| 198 | 2.2.2.4.3.3 | Conexion a BD | 0.5h | 2016-07-05 18:30 | 2016-07-05 19:00 | 197 | 18.25d | 0d | Programado | 0.5h | 60 |
| 199 | 2.2.2.4.3.4 | Alta de HistorialMèdico | 0.5h | 2016-07-06 09:00 | 2016-07-06 09:30 | 198 | 18.25d | 0d | Programado | 0.5h | 60 |
| 200 | 2.2.2.4.3.5 | Baja de HistorialMèdico | 0.5h | 2016-07-06 09:30 | 2016-07-06 10:00 | 199 | 18.25d | 0d | Programado | 0.5h | 60 |
| 201 | 2.2.2.4.3.6 | Actualizaciòn de HistorialMèdico | 1h | 2016-07-06 10:00 | 2016-07-06 11:00 | 200 | 18.25d | 0d | Programado | 1h | 120 |
| 202 | 2.2.2.4.3.7 | Consulta de HistorialMèdico | 1h | 2016-07-06 11:00 | 2016-07-06 12:00 | 201 | 18.25d | 0d | Programado | 1h | 120 |
| 203 | 2.2.2.4.3.8 | Reportes de HistorialMèdico | 2h | 2016-07-06 12:00 | 2016-07-06 16:00 | 202 | 18.25d | 0d | Programado | 2h | 240 |
| 204 | 2.2.2.4.4 | **Mòdulo HistorialEconòmio** | 1.56d | 2016-07-06 16:00 | 2016-07-08 10:30 | 203 | 18.25d |  |  | 12.5h | 1,500 |
| 205 | 2.2.2.4.4.1 | Interfaz | 1h | 2016-07-06 16:00 | 2016-07-06 17:00 |  | 18.25d | 0d | Programado | 1h | 120 |
| 206 | 2.2.2.4.4.2 | Clases de HistorialEconòmio | 6h | 2016-07-06 17:00 | 2016-07-07 13:00 | 205 | 18.25d | 0d | Programado | 6h | 720 |
| 207 | 2.2.2.4.4.3 | Conexion a BD | 0.5h | 2016-07-07 15:00 | 2016-07-07 15:30 | 206 | 18.25d | 0d | Programado | 0.5h | 60 |
| 208 | 2.2.2.4.4.4 | Alta de HistorialEconòmio | 0.5h | 2016-07-07 15:30 | 2016-07-07 16:00 | 207 | 18.25d | 0d | Programado | 0.5h | 60 |
| 209 | 2.2.2.4.4.5 | Baja de Asesorìa | 0.5h | 2016-07-07 16:00 | 2016-07-07 16:30 | 208 | 18.25d | 0d | Programado | 0.5h | 60 |
| 210 | 2.2.2.4.4.6 | Actualizaciòn de HistorialEconòmio | 1h | 2016-07-07 16:30 | 2016-07-07 17:30 | 209 | 18.25d | 0d | Programado | 1h | 120 |
| 211 | 2.2.2.4.4.7 | Consulta de HistorialEconòmio | 1h | 2016-07-07 17:30 | 2016-07-07 18:30 | 210 | 18.25d | 0d | Programado | 1h | 120 |
| 212 | 2.2.2.4.4.8 | Reportes de HistorialEconòmio | 2h | 2016-07-07 18:30 | 2016-07-08 10:30 | 211 | 18.25d | 0d | Programado | 2h | 240 |

Notes:
- 187: Realización de la interfaz del módulo de historial académico
- 188: Realización de las clases de los historial académico
- 189: Realización de la conexión a la base de datos
- 190: Realización de la codificación del alta a la tabla de historial académico
- 191: Realización de la codificación de la baja en la tabla de historial académico
- 192: Realización de la codificación de la actualización a la tabla de historial académico
- 193: Realización de las consultas correspondientes a la tabla historial académico
- 194: Realización del reporte de la tabla historial académico
- 196: Realización de la interfaz del módulo de historial médico
- 197: Realización de las clases de los historial médico
- 198: Realización de la conexión a la base de datos
- 199: Realización de la codificación del alta a la tabla de historial médico
- 200: Realización de la codificación de la baja en la tabla de historial médico
- 201: Realización de la codificación de la actualización a la tabla de historial médico
- 202: Realización de las consultas correspondientes a la tabla historial médico
- 203: Realización del reporte de la tabla historial médico
- 205: Realización de la interfaz del módulo de historial económico
- 206: Realización de las clases de los historial económico
- 207: Realización de la conexión a la base de datos
- 208: Realización de la codificación del alta a la tabla de historial económico
- 209: Realización de la codificación de la baja en la tabla de historial económico
- 210: Realización de la codificación de la actualización a la tabla de historial económico
- 211: Realización de las consultas correspondientes a la tabla historial económico
- 212: Realización del reporte de la tabla historial económico

| ID | WBS | Task | Type | Duration | Start | Finish | Predecessors | Total slack | Free slack | Resources | Work | Cost |
| --- | --- | --- | --- | --- | --- | --- | --- | --- | --- | --- | --- | --- |
| 213 | 2.2.2.4.5 | **Mòdulo HistorialFamiliar** |  | 1.56d | 2016-07-08 10:30 | 2016-07-11 17:00 | 212 | 18.25d |  |  | 12.5h | 1,500 |
| 214 | 2.2.2.4.5.1 | Interfaz |  | 1h | 2016-07-08 10:30 | 2016-07-08 11:30 |  | 18.25d | 0d | Programado | 1h | 120 |
| 215 | 2.2.2.4.5.2 | Clases de HistorialFamiliar |  | 6h | 2016-07-08 11:30 | 2016-07-11 09:30 | 214 | 18.25d | 0d | Programado | 6h | 720 |
| 216 | 2.2.2.4.5.3 | Conexion a BD |  | 0.5h | 2016-07-11 09:30 | 2016-07-11 10:00 | 215 | 18.25d | 0d | Programado | 0.5h | 60 |
| 217 | 2.2.2.4.5.4 | Alta de HistorialFamiliar |  | 0.5h | 2016-07-11 10:00 | 2016-07-11 10:30 | 216 | 18.25d | 0d | Programado | 0.5h | 60 |
| 218 | 2.2.2.4.5.5 | Baja de HistorialFamiliar |  | 0.5h | 2016-07-11 10:30 | 2016-07-11 11:00 | 217 | 18.25d | 0d | Programado | 0.5h | 60 |
| 219 | 2.2.2.4.5.6 | Actualizaciòn de HistorialFamiliar |  | 1h | 2016-07-11 11:00 | 2016-07-11 12:00 | 218 | 18.25d | 0d | Programado | 1h | 120 |
| 220 | 2.2.2.4.5.7 | Consulta de HistorialFamiliar |  | 1h | 2016-07-11 12:00 | 2016-07-11 13:00 | 219 | 18.25d | 0d | Programado | 1h | 120 |
| 221 | 2.2.2.4.5.8 | Reportes de HistorialFamiliar |  | 2h | 2016-07-11 15:00 | 2016-07-11 17:00 | 220 | 18.25d | 0d | Programado | 2h | 240 |
| 222 | 2.2.2.4.5.9 | Entrega de reporte de módulo dirección, deudaspagar, deudascobrar, abonoclientes y abonoproveedores. | milestone | 0d | 2016-07-08 10:30 | 2016-07-08 10:30 |  | 24.81d |  |  |  |  |
| 223 | 2.2.2.5 | **Pruebas** |  | 1.56d | 2016-07-11 17:00 | 2016-07-13 11:30 | 221 | 18.25d |  |  | 12.5h | 1,437.5 |
| 224 | 2.2.2.5.1 | **Pruebas de caja blanca** |  | 1.56d | 2016-07-11 17:00 | 2016-07-13 11:30 |  | 18.25d |  |  | 12.5h | 1,437.5 |
| 225 | 2.2.2.5.1.1 | **Mòdulo de Generaciones** |  | 0.31d | 2016-07-11 17:00 | 2016-07-12 09:30 |  | 18.25d |  |  | 2.5h | 287.5 |
| 226 | 2.2.2.5.1.1.1 | Pruebas de modulo |  | 1.5h | 2016-07-11 17:00 | 2016-07-11 18:30 |  | 18.25d | 0d | Tester | 1.5h | 172.5 |
| 227 | 2.2.2.5.1.1.2 | Puebas unitarias |  | 1h | 2016-07-11 18:30 | 2016-07-12 09:30 | 226 | 18.25d | 0d | Tester | 1h | 115 |
| 228 | 2.2.2.5.1.2 | **Mòdulo HistorialAcadèmico** |  | 0.31d | 2016-07-12 09:30 | 2016-07-12 12:00 | 227 | 18.25d |  |  | 2.5h | 287.5 |
| 229 | 2.2.2.5.1.2.1 | Pruebas de modulo |  | 1.5h | 2016-07-12 09:30 | 2016-07-12 11:00 |  | 18.25d | 0d | Tester | 1.5h | 172.5 |
| 230 | 2.2.2.5.1.2.2 | Puebas unitarias |  | 1h | 2016-07-12 11:00 | 2016-07-12 12:00 | 229 | 18.25d | 0d | Tester | 1h | 115 |
| 231 | 2.2.2.5.1.3 | **Mòdulo HistorialMèdico** |  | 0.31d | 2016-07-12 12:00 | 2016-07-12 16:30 | 230 | 18.25d |  |  | 2.5h | 287.5 |
| 232 | 2.2.2.5.1.3.1 | Pruebas de modulo |  | 1.5h | 2016-07-12 12:00 | 2016-07-12 15:30 |  | 18.25d | 0d | Tester | 1.5h | 172.5 |
| 233 | 2.2.2.5.1.3.2 | Puebas unitarias |  | 1h | 2016-07-12 15:30 | 2016-07-12 16:30 | 232 | 18.25d | 0d | Tester | 1h | 115 |
| 234 | 2.2.2.5.1.4 | **Mòdulo HistorialEconòmio** |  | 0.31d | 2016-07-12 16:30 | 2016-07-12 19:00 | 233 | 18.25d |  |  | 2.5h | 287.5 |
| 235 | 2.2.2.5.1.4.1 | Pruebas de modulo |  | 1.5h | 2016-07-12 16:30 | 2016-07-12 18:00 |  | 18.25d | 0d | Tester | 1.5h | 172.5 |
| 236 | 2.2.2.5.1.4.2 | Puebas unitarias |  | 1h | 2016-07-12 18:00 | 2016-07-12 19:00 | 235 | 18.25d | 0d | Tester | 1h | 115 |

Notes:
- 214: Realización de la interfaz del módulo de historial familiar
- 215: Realización de las clases de los historial familiar
- 216: Realización de la conexión a la base de datos
- 217: Realización de la codificación del alta a la tabla de historial familiar
- 218: Realización de la codificación de la baja en la tabla de historial familiar
- 219: Realización de la codificación de la actualización a la tabla de historial familiar
- 220: Realización de las consultas correspondientes a la tabla historial familiar
- 221: Realización del reporte de la tabla historial familiar
- 226: Realización de las pruebas de módulo a la tabla generaciones
- 227: Realización de las pruebas unitarias al módulo de generaciones
- 229: Realización de las pruebas de módulo a la tabla historia académico
- 230: Realización de las pruebas unitarias al módulo de historia académico
- 232: Realización de las pruebas de módulo a la tabla historia médico
- 233: Realización de las pruebas unitarias al módulo de historia médico
- 235: Realización de las pruebas de módulo a la tabla historia económico
- 236: Realización de las pruebas unitarias al módulo de historia económico

| ID | WBS | Task | Type | Duration | Start | Finish | Predecessors | Total slack | Free slack | Constraint | Resources | Work | Cost |
| --- | --- | --- | --- | --- | --- | --- | --- | --- | --- | --- | --- | --- | --- |
| 237 | 2.2.2.5.1.5 | **Mòdulo HistorialFamiliar** |  | 0.31d | 2016-07-12 19:00 | 2016-07-13 11:30 | 236 | 18.25d |  |  |  | 2.5h | 287.5 |
| 238 | 2.2.2.5.1.5.1 | Pruebas de modulo |  | 1.5h | 2016-07-13 09:00 | 2016-07-13 10:30 |  | 18.25d | 0d |  | Tester | 1.5h | 172.5 |
| 239 | 2.2.2.5.1.5.2 | Puebas unitarias |  | 1h | 2016-07-13 10:30 | 2016-07-13 11:30 | 238 | 18.25d | 0d |  | Tester | 1h | 115 |
| 240 | 2.2.2.5.1.5.3 | Entrega de resultados de pruebas de módulo de dirección, deudaspagar, deudascobrar, abonoclientes y abonoproveedores. | milestone | 0d | 2016-07-12 19:00 | 2016-07-12 19:00 |  | 22d |  |  |  |  |  |
| 241 | 3 | **Implementación** |  | 1.81d | 2016-07-13 11:30 | 2016-07-15 10:00 | 239 | 18.25d |  |  |  | 17h | 2,027.5 |
| 242 | 3.1 | Evaliaciòn del hosting |  | 1.5h | 2016-07-13 11:30 | 2016-07-13 13:00 |  | 18.25d | 0d |  | Programado | 1.5h | 180 |
| 243 | 3.2 | Emplementar el sitio en el hosting |  | 0.5h | 2016-07-13 15:00 | 2016-07-13 15:30 | 242 | 18.25d | 0d |  | Programado | 0.5h | 60 |
| 244 | 3.3 | Manual de usuario |  | 8h | 2016-07-13 15:30 | 2016-07-14 15:30 | 243 | 18.25d | 0d |  | Programado | 8h | 960 |
| 245 | 3.4 | Capacitaciòn |  | 2h | 2016-07-14 15:30 | 2016-07-14 17:30 | 244 | 18.25d | 0d |  | Programado | 2h | 240 |
| 246 | 3.5 | **Pruebas de caja blanca** |  | 0.31d | 2016-07-14 17:30 | 2016-07-15 10:00 | 245 | 18.25d |  |  |  | 5h | 587.5 |
| 247 | 3.5.1 | Pruebas de rendimiento |  | 1.5h | 2016-07-14 17:30 | 2016-07-14 19:00 |  | 18.25d | 0d |  | Programado; Tester | 3h | 352.5 |
| 248 | 3.5.2 | Pruebas de sistema |  | 1h | 2016-07-15 09:00 | 2016-07-15 10:00 | 247 | 18.25d | 0d |  | Programado; Tester | 2h | 235 |
| 249 | 4 | **Cierre de proyecto** |  | 1.62d | 2016-07-15 10:00 | 2016-07-18 17:00 | 248 | 18.25d |  |  |  | 13h | 1,990 |
| 250 | 4.1 | Carta de aceptaciòn |  | 2.5h | 2016-07-15 10:00 | 2016-07-15 12:30 |  | 18.25d | 0d |  | Administrador de Proyecto | 2.5h | 450 |
| 251 | 4.2 | Acta de cierre de proyecto |  | 1h | 2016-07-15 12:30 | 2016-07-15 15:30 | 250 | 18.25d | 0d |  | Administrador de Proyecto | 1h | 180 |
| 252 | 4.3 | Evaluaciòn de desempeño |  | 2h | 2016-07-15 15:30 | 2016-07-15 17:30 | 251 | 18.25d | 0d |  | Administrador de Configuración | 2h | 220 |
| 253 | 4.4 | Junta de lecciones aprendidas |  | 3h | 2016-07-15 17:30 | 2016-07-18 10:30 | 252 | 18.25d | 0d |  | Administrador de Configuración | 3h | 330 |
| 254 | 4.5 | Revisiòn de adherencias de procesos |  | 1.5h | 2016-07-18 10:30 | 2016-07-18 12:00 | 253 | 18.25d | 0d |  | Administrador de Proyecto | 1.5h | 270 |
| 255 | 4.6 | Liberaciòn de recursos |  | 1h | 2016-07-18 12:00 | 2016-07-18 13:00 | 254 | 18.25d | 0d |  | Administrador de Proyecto | 1h | 180 |
| 256 | 4.7 | Informe final(cierre) |  | 2h | 2016-07-18 15:00 | 2016-07-18 17:00 | 255 | 18.25d |  |  | Administrador de Proyecto | 2h | 360 |
| 257 | 5 | **Revisión** |  | 70d | 2016-05-06 09:00 | 2016-08-12 09:00 |  | 0d |  |  |  |  |  |
| 258 | 5.1 | Revisión 1 | milestone, manual | 0d | 2016-05-06 09:00 | 2016-05-06 09:00 |  |  |  | start no earlier than 2016-05-06 09:00 |  |  |  |
| 259 | 5.2 | Revisión 2 | milestone, manual | 0d | 2016-05-13 09:00 | 2016-05-13 09:00 |  |  |  | start no earlier than 2016-05-13 09:00 |  |  |  |
| 260 | 5.3 | Revisión 3 | milestone, manual | 0d | 2016-05-20 09:00 | 2016-05-20 09:00 |  |  |  | start no earlier than 2016-05-20 09:00 |  |  |  |
| 261 | 5.4 | Revisión 4 | milestone, manual | 0d | 2016-05-27 09:00 | 2016-05-27 09:00 |  |  |  | start no earlier than 2016-05-27 09:00 |  |  |  |
| 262 | 5.5 | Revisión 5 | milestone, manual | 0d | 2016-06-03 09:00 | 2016-06-03 09:00 |  |  |  | start no earlier than 2016-06-03 09:00 |  |  |  |
| 263 | 5.6 | Revisión 6 | milestone, manual | 0d | 2016-06-10 09:00 | 2016-06-10 09:00 |  |  |  | start no earlier than 2016-06-10 09:00 |  |  |  |
| 264 | 5.7 | Revisión 7 | milestone, manual | 0d | 2016-06-17 09:00 | 2016-06-17 09:00 |  |  |  | start no earlier than 2016-06-17 09:00 |  |  |  |
| 265 | 5.8 | Revisión 8 | milestone, manual | 0d | 2016-06-24 09:00 | 2016-06-24 09:00 |  |  |  | start no earlier than 2016-06-24 09:00 |  |  |  |
| 266 | 5.9 | Revisión 9 | milestone, manual | 0d | 2016-07-01 09:00 | 2016-07-01 09:00 |  |  |  | start no earlier than 2016-07-01 09:00 |  |  |  |
| 267 | 5.10 | Revisión 10 | milestone, manual | 0d | 2016-07-08 09:00 | 2016-07-08 09:00 |  |  |  | start no earlier than 2016-07-08 09:00 |  |  |  |
| 268 | 5.11 | Revisión 11 | milestone, manual | 0d | 2016-07-15 09:00 | 2016-07-15 09:00 |  |  |  | start no earlier than 2016-07-15 09:00 |  |  |  |
| 269 | 5.12 | Revisión 12 | milestone, manual | 0d | 2016-07-22 09:00 | 2016-07-22 09:00 |  |  |  | start no earlier than 2016-07-22 09:00 |  |  |  |
| 270 | 5.13 | Revisión 13 | milestone, manual | 0d | 2016-07-29 09:00 | 2016-07-29 09:00 |  |  |  | start no earlier than 2016-07-29 09:00 |  |  |  |
| 271 | 5.14 | Revisión 14 | milestone, manual | 0d | 2016-08-05 09:00 | 2016-08-05 09:00 |  |  |  | start no earlier than 2016-08-05 09:00 |  |  |  |
| 272 | 5.15 | Revisión 15 | milestone, manual | 0d | 2016-08-12 09:00 | 2016-08-12 09:00 |  |  |  | start no earlier than 2016-08-12 09:00 |  |  |  |

Notes:
- 238: Realización de las pruebas de módulo a la tabla historia familiar
- 239: Realización de las pruebas unitarias al módulo de historia familiar
- 242: Evaluar el hosting al cual se subirá la aplicación web
- 243: Implementación de la aplicación web en el hosting seleccionado
- 244: Elaboración del manual de usuario
- 245: Brindar capacitación a la empresa cliente
- 247: Realizar pruebas de rendimiento a la aplicación web en el hosting para corroborar que todo funcione correctamente
- 248: Realizar las pruebas de sistema a la aplicación web para corroborar que funciona bien ya implementado en el hosting
- 250: Redactar la carta de aceptación en la que el cliente esta de acuerdo con lo que se esta entregando
- 251: Se firma el acta en la cual se indica que el proyecto se termino en tiempo y forma
- 252: Realizar una evaluación de desempeño para observar como fue realizado el proyecto
- 253: Retroalimentar a los integrantes del equipo sobre lo realizado en el proyecto
- 254: Realización de revisión sobre como fue que funcionaron los procesos
- 255: Se hace la liberación de los recursos utilizados en la creación del proyecto
- 256: Realización del informe final sobre la elaboración del proyecto
