# SCA-001_WBS

Schedule from MS Project, 2016-05-11 to 2016-07-18, costs in $, A marks actual dates.
microsoft

## Calendars

- Estándar: Mon-Fri 09:00-13:00, 15:00-19:00; Sat-Sun off.

## Resources

| Resource | Rate |
| --- | --- |
| BAPG | 145.95 |
| SDL | 108.39 |
| BAPG | 109.38 |
| ARHR | 92.18 |
| ASC | 105.74 |
| ASC | 99.35 |
| ARHR | 84.92 |
| Stakeholder |  |

## Schedule

| ID | WBS | Task | Type | Duration | Start | Finish | Predecessors | Complete | Remaining | Total slack | Resources | Work | Actual work | Cost | Actual cost |
| --- | --- | --- | --- | --- | --- | --- | --- | --- | --- | --- | --- | --- | --- | --- | --- |
| 1 | 1 | **Plan Preliminar** |  | 1.75d | 2016-05-11 09:00 A | 2016-05-12 17:00 |  | 99% | 0d | 47d |  | 14h | 14h | 2,043.3 | 2,043.3 |
| 2 | 1.1 | Generar WBS del producto inicial |  | 4h | 2016-05-11 09:00 A | 2016-05-11 13:00 A |  | 100% |  |  | BAPG | 4h | 4h | 583.8 | 583.8 |
| 3 | 1.2 | Generar Project Charter |  | 1h | 2016-05-11 15:00 A | 2016-05-11 16:00 A | 2 | 100% |  |  | BAPG | 1h | 1h | 145.95 | 145.95 |
| 4 | 1.3 | Plan Preliminar del proyecto |  | 8h | 2016-05-11 16:00 A | 2016-05-12 16:00 A | 3 | 100% |  |  | BAPG | 8h | 8h | 1,167.6 | 1,167.6 |
| 5 | 1.4 | Matriz de comunicación |  | 1h | 2016-05-12 16:00 A | 2016-05-12 17:00 A | 4 | 100% |  |  | BAPG | 1h | 1h | 145.95 | 145.95 |
| 6 | 1.5 | Entrega de WBS del producto inicial, project charter, plan preliminar y matriz de comunicación | milestone | 0d | 2016-05-11 09:00 | 2016-05-11 09:00 |  |  |  | 48.75d |  |  |  |  |  |
| 7 | 2 | **Nombre"Proyecto"** |  | 43.56d | 2016-05-12 17:00 A | 2016-07-13 11:30 |  | 99% | 0.5d | 3.44d |  | 336.5h | 332.5h | 36,943.68 | 36,359.88 |
| 8 | 2.1 | Formación del equipo |  | 1h | 2016-05-12 17:00 A | 2016-05-12 18:00 A | 5 | 100% |  |  | BAPG | 1h | 1h | 145.95 | 145.95 |
| 9 | 2.2 | **Construcción** |  | 43.44d | 2016-05-12 18:00 A | 2016-07-13 11:30 | 8 | 99% | 0.5d | 3.44d |  | 335.5h | 331.5h | 36,797.73 | 36,213.93 |
| 10 | 2.2.1 | **FaseUno/IteraciónUno** |  | 26d | 2016-05-12 18:00 A | 2016-06-17 18:00 |  | 98% | 0.5d | 20.88d |  | 196h | 192h | 20,942.42 | 20,358.62 |
| 11 | 2.2.1.1 | **Análisis** |  | 4.69d | 2016-05-12 18:00 A | 2016-05-19 15:30 |  | 89% | 0.5d | 42.19d |  | 37.5h | 33.5h | 5,228.98 | 4,645.19 |
| 12 | 2.2.1.1.1 | **Elicitación** |  | 3.12d | 2016-05-12 18:00 A | 2016-05-17 19:00 |  | 84% | 0.5d | 43.75d |  | 25h | 21h | 3,648.75 | 3,064.95 |
| 13 | 2.2.1.1.1.1 | Generar la lista de proveedores |  | 2h | 2016-05-12 18:00 A | 2016-05-13 10:00 A |  | 100% |  |  | BAPG | 2h | 2h | 291.9 | 291.9 |
| 14 | 2.2.1.1.1.2 | Evaluar proveedores de requerimientos |  | 1h | 2016-05-13 10:00 A | 2016-05-13 11:00 A | 13 | 100% |  |  | BAPG | 1h | 1h | 145.95 | 145.95 |
| 15 | 2.2.1.1.1.3 | Definir estrategias de recolección de datos |  | 0.5h | 2016-05-13 11:00 A | 2016-05-13 11:30 A | 14 | 100% |  |  | BAPG | 0.5h | 0.5h | 72.98 | 72.98 |
| 16 | 2.2.1.1.1.4 | Planificacion de reuniones de licitación |  | 1.5h | 2016-05-13 11:30 A | 2016-05-13 13:00 A | 15 | 100% |  |  | BAPG | 1.5h | 1.5h | 218.93 | 218.93 |
| 17 | 2.2.1.1.1.5 | Identificar procesos del sistema |  | 8h | 2016-05-13 15:00 A | 2016-05-16 13:00 A | 16 | 100% |  |  | BAPG | 8h | 8h | 1,167.6 | 1,167.6 |
| 18 | 2.2.1.1.1.6 | Identificar requerimientos funcionales |  | 8h | 2016-05-16 15:00 A | 2016-05-17 13:00 A | 17 | 100% |  |  | BAPG | 8h | 8h | 1,167.6 | 1,167.6 |
| 19 | 2.2.1.1.1.7 | Identificar requerimientos no funcionales |  | 4h | 2016-05-17 15:00 | 2016-05-17 19:00 | 18 |  |  | 43.75d | BAPG | 4h |  | 583.8 |  |
| 20 | 2.2.1.1.2 | **Especificacion** |  | 1d | 2016-05-18 09:00 A | 2016-05-18 19:00 A |  | 100% |  |  |  | 8h | 8h | 942.24 | 942.24 |
| 21 | 2.2.1.1.2.1 | Evaluacion de requerimentos |  | 2h | 2016-05-18 09:00 A | 2016-05-18 11:00 A | 19 | 100% |  |  | BAPG | 2h | 2h | 291.9 | 291.9 |
| 22 | 2.2.1.1.2.2 | SRS |  | 6h | 2016-05-18 11:00 A | 2016-05-18 19:00 A | 21 | 100% |  |  | SDL | 6h | 6h | 650.34 | 650.34 |
| 23 | 2.2.1.1.3 | **Gestión requerimientos** |  | 4.69d | 2016-05-12 18:00 A | 2016-05-19 15:30 |  | 99% | 0d | 42.19d |  | 4.5h | 4.5h | 638 | 638 |
| 24 | 2.2.1.1.3.1 | Priorizar los requerimientos |  | 2h | 2016-05-19 09:00 A | 2016-05-19 11:00 A | 22 | 100% |  |  | BAPG | 2h | 2h | 291.9 | 291.9 |
| 25 | 2.2.1.1.3.2 | Alamcenar en repositorio |  | 0.5h | 2016-05-19 11:00 A | 2016-05-19 11:30 A | 24 | 100% |  |  | SDL | 0.5h | 0.5h | 54.2 | 54.2 |
| 26 | 2.2.1.1.3.3 | Asignar a los desarrolladores de software |  | 1h | 2016-05-19 11:30 A | 2016-05-19 12:30 A | 25 | 100% |  |  | BAPG | 1h | 1h | 145.95 | 145.95 |
| 27 | 2.2.1.1.3.4 | Administración de cambios de requerimientos |  | 0.5h | 2016-05-19 12:30 A | 2016-05-19 13:00 A | 26 | 100% |  |  | BAPG | 0.5h | 0.5h | 72.98 | 72.98 |
| 28 | 2.2.1.1.3.5 | Administración de la trazabilidad de requerimientos |  | 0.5h | 2016-05-19 15:00 A | 2016-05-19 15:30 A | 27 | 100% |  |  | BAPG | 0.5h | 0.5h | 72.98 | 72.98 |
| 29 | 2.2.1.1.3.6 | Entrega de lista de proveedores de requerimientos, procesos del sistema y SRS | milestone | 0d | 2016-05-12 18:00 | 2016-05-12 18:00 |  |  |  | 46.88d |  |  |  |  |  |

Notes:
- 2: Definir Actividades de ejecución de proyecto, duración de tiempos, definir fechas de inicio, fecha de fin, recursos, actividades sucesoras y predecesoras, hitos y revisiones.
- 3: Acta de constitución del proyecto en la cual el cliente se compromete con la información solicitada
- 4: Se comienza a elaborar el proyecto
- 5: Establecer metodo por el cual tendra comunicación el equipo
- 8: Formación del equipo de trabajo de acuerdo a las habilidades de cada uno
- 13: Fijar los proveedores de requerimientos, de donde obtendremos la información
- 14: Selleva acabo la valoración de los porveedores de requerimientos que serán lo adecuados para nuestro proyecto
- 15: Se define como se recolectaran los datos
- 16: Se especifican los tiempos en que se realizaran las reuniones
- 17: Se identificara con que procesos contará nuestro sistema
- 18: Se identifican los requerimientos funcionales que servirán para la elaboración de la aplicación
- 19: Se identifican los requerimientos no funcionales convenientes para el sistema
- 21: Llevar acabo la evaluación de los requerimientos obtenidos
- 22: Elaboración de la documentación de los requerimientos que se usarán
- 24: Valoración de los requerimientos viendo cuales son los más importantes de cumplir
- 25: Guardar y respalda toda la información en un repositorio para que este a la mano cuando sea necesario
- 26: Asignación de encargados a cada una de las tareas
- 27: Comenzar con el documento que gestionará los cambios que se puedan hacer a los requerimientos
- 28: Lleva un control de los requerimientos

| ID | WBS | Task | Type | Duration | Start | Finish | Predecessors | Complete | Remaining | Total slack | Resources | Work | Actual work | Cost | Actual cost |
| --- | --- | --- | --- | --- | --- | --- | --- | --- | --- | --- | --- | --- | --- | --- | --- |
| 30 | 2.2.1.2 | **Planificación** |  | 7.81d | 2016-05-12 18:00 A | 2016-05-24 16:30 |  | 99% | 0d | 39.06d |  | 13h | 13h | 1,526.46 | 1,526.46 |
| 31 | 2.2.1.2.1 | Definicion del ciclo de vida |  | 0.5h | 2016-05-19 15:30 A | 2016-05-19 16:00 A | 28 | 100% |  |  | BAPG | 0.5h | 0.5h | 72.98 | 72.98 |
| 32 | 2.2.1.2.2 | Definicion de politicas |  | 0.5h | 2016-05-19 16:00 A | 2016-05-19 16:30 A | 31 | 100% |  |  | BAPG | 0.5h | 0.5h | 72.98 | 72.98 |
| 33 | 2.2.1.2.3 | Actualizar plan de proyecto |  | 2h | 2016-05-19 16:30 A | 2016-05-19 18:30 A | 32 | 100% |  |  | BAPG | 2h | 2h | 291.9 | 291.9 |
| 34 | 2.2.1.2.4 | Actualizar matriz de comunicación |  | 1h | 2016-05-19 18:30 A | 2016-05-20 09:30 A | 33 | 100% |  |  | BAPG | 1h | 1h | 145.95 | 145.95 |
| 35 | 2.2.1.2.5 | **Estimación** |  | 0.75d | 2016-05-20 09:30 A | 2016-05-20 17:30 A |  | 100% |  |  |  | 6h | 6h | 687.9 | 687.9 |
| 36 | 2.2.1.2.5.1 | Actualizar WBS/Calendario |  | 1h | 2016-05-20 09:30 A | 2016-05-20 10:30 A | 34 | 100% |  |  | SDL | 1h | 1h | 108.39 | 108.39 |
| 37 | 2.2.1.2.5.2 | Diccionario del WBS |  | 4h | 2016-05-20 10:30 A | 2016-05-20 16:30 A | 36 | 100% |  |  | SDL | 4h | 4h | 433.56 | 433.56 |
| 38 | 2.2.1.2.5.3 | Costos |  | 1h | 2016-05-20 16:30 A | 2016-05-20 17:30 A | 37 | 100% |  |  | BAPG | 1h | 1h | 145.95 | 145.95 |
| 39 | 2.2.1.2.6 | **Riesgos** |  | 1.5d | 2016-05-20 17:30 A | 2016-05-24 11:30 A |  | 100% |  |  |  |  |  |  |  |
| 40 | 2.2.1.2.6.1 | Identificación de riesgos |  | 6h | 2016-05-20 17:30 A | 2016-05-23 15:30 A | 38 | 100% |  |  |  |  |  |  |  |
| 41 | 2.2.1.2.6.2 | Asignación de prioridades |  | 2h | 2016-05-23 15:30 A | 2016-05-23 17:30 A | 40 | 100% |  |  |  |  |  |  |  |
| 42 | 2.2.1.2.6.3 | Plan de mitigación y contingencia |  | 4h | 2016-05-23 17:30 A | 2016-05-24 11:30 A | 41FS-1h | 100% |  |  |  |  |  |  |  |
| 43 | 2.2.1.2.7 | **Aseguramiento de la calidad** |  | 7.81d | 2016-05-12 18:00 A | 2016-05-24 16:30 |  | 99% | 0d | 39.06d |  | 3h | 3h | 254.76 | 254.76 |
| 44 | 2.2.1.2.7.1 | Plan de gestión de la configuración |  | 2h | 2016-05-24 11:30 A | 2016-05-24 15:30 A | 42 | 100% |  |  | ARHR | 2h | 2h | 169.84 | 169.84 |
| 45 | 2.2.1.2.7.2 | Junta de arranque de construcción |  | 1h | 2016-05-24 15:30 A | 2016-05-24 16:30 A | 44 | 100% |  |  | ARHR | 1h | 1h | 84.92 | 84.92 |
| 46 | 2.2.1.2.7.3 | Entrega de ciclo de vida a utilizar, políticas,plan del proyecto, matriz de comunicación, diccionario del WBS, riesgos, prioridades de los riesgos, plan de mitigación y contingencia, plan de gestión de la configuración y junta de arranque de construcción. | milestone | 0d | 2016-05-12 18:00 | 2016-05-12 18:00 |  |  |  | 46.88d |  |  |  |  |  |
| 47 | 2.2.1.3 | **Diseño** |  | 2.62d | 2016-05-24 16:30 A | 2016-05-27 11:30 |  | 99% | 0d | 36.44d |  | 21h | 21h | 2,296.98 | 2,296.98 |
| 48 | 2.2.1.3.1 | Diagrama de la Arquitectura |  | 2h | 2016-05-24 16:30 A | 2016-05-24 18:30 A | 45 | 100% |  |  | BAPG | 2h | 2h | 218.76 | 218.76 |
| 49 | 2.2.1.3.2 | Diagrama de casos de uso |  | 4h | 2016-05-24 18:30 A | 2016-05-25 12:30 A | 48 | 100% |  |  | BAPG | 4h | 4h | 437.52 | 437.52 |
| 50 | 2.2.1.3.3 | Diagrama de secuencia |  | 2h | 2016-05-25 12:30 A | 2016-05-25 16:30 A | 49 | 100% |  |  | BAPG | 2h | 2h | 218.76 | 218.76 |
| 51 | 2.2.1.3.4 | Diagrama de clases |  | 1h | 2016-05-25 16:30 A | 2016-05-25 17:30 A | 50 | 100% |  |  | BAPG | 1h | 1h | 109.38 | 109.38 |
| 52 | 2.2.1.3.5 | Diagrama de componentes |  | 1h | 2016-05-25 17:30 A | 2016-05-25 18:30 A | 51 | 100% |  |  | BAPG | 1h | 1h | 109.38 | 109.38 |
| 53 | 2.2.1.3.6 | Diagrama de despliegue |  | 2h | 2016-05-25 18:30 A | 2016-05-26 10:30 A | 52 | 100% |  |  | BAPG | 2h | 2h | 218.76 | 218.76 |
| 54 | 2.2.1.3.7 | Mapa de navegación |  | 1h | 2016-05-26 10:30 A | 2016-05-26 11:30 A | 53 | 100% |  |  | BAPG | 1h | 1h | 109.38 | 109.38 |
| 55 | 2.2.1.3.8 | Maquetación |  | 6h | 2016-05-26 11:30 A | 2016-05-27 09:30 A | 54 | 100% |  |  | BAPG | 6h | 6h | 656.28 | 656.28 |

Notes:
- 31: Llevar acabo la definición del ciclo de vida a utilizar
- 32: Definición de las politicas que habrá dentro del ambiente laboral
- 33: Se tendra actualizado el plan del proyecto conforme sea necesario
- 34: Actualización de la comunicación
- 36: Actualización del WBS
- 37: Se lleva acabo las redacción del diccionario del WBS
- 38: Establecimiento de los costos que tendrá el proyecto
- 40: Se identifican los posibles riesgos del proyecto
- 41: Se priorizan los riesgos
- 42: Se elabora un plan de mitigación y contingencia
- 44: Se elabora el plan de gestión de configuración. En esta parte es donde empieza a interactuar el administrador de la configuración
- 45: Se revisa que se tengan los productos necesarios para poder arrancar el sistema
- 48: Elaboración del diseño de la arquitectura de la aplicación
- 49: Realización de los diagramas de casos de uso
- 50: Realización de los diagramas de secuencia
- 51: Realización de los diagramas de clases
- 52: Realización de los diagramas de componentes
- 53: Realización de los diagramas de despliegues
- 54: Realización del mapa de navegación
- 55: Realizar la maquetación de la aplicación

| ID | WBS | Task | Type | Duration | Start | Finish | Predecessors | Complete | Remaining | Total slack | Resources | Work | Actual work | Cost | Actual cost |
| --- | --- | --- | --- | --- | --- | --- | --- | --- | --- | --- | --- | --- | --- | --- | --- |
| 56 | 2.2.1.3.9 | **Diagramas BD** |  | 0.25d | 2016-05-27 09:30 A | 2016-05-27 11:30 | 55 | 99% | 0d | 36.44d |  | 2h | 2h | 218.76 | 218.76 |
| 57 | 2.2.1.3.9.1 | Diagrama E-R |  | 1h | 2016-05-27 09:30 A | 2016-05-27 10:30 A |  | 100% |  |  | BAPG | 1h | 1h | 109.38 | 109.38 |
| 58 | 2.2.1.3.9.2 | Diagrama Relacional |  | 1h | 2016-05-27 10:30 A | 2016-05-27 11:30 A | 57 | 100% |  |  | BAPG | 1h | 1h | 109.38 | 109.38 |
| 59 | 2.2.1.3.9.3 | Entrega de la arquitectura del sistema, casos de uso, secuencia, clases, componentes, despliegues, mapa de navegación y maquetación. | milestone | 0d | 2016-05-27 09:30 | 2016-05-27 09:30 |  |  |  | 36.69d |  |  |  |  |  |
| 60 | 2.2.1.4 | **Codificación** |  | 11.75d | 2016-05-27 11:30 A | 2016-06-14 09:30 | 58 | 99% | 0d | 24.69d |  | 94h | 94h | 8,664.92 | 8,664.92 |
| 61 | 2.2.1.4.1 | Codificaciòn de la base de datos |  | 3h | 2016-05-27 11:30 A | 2016-05-27 16:30 A |  | 100% |  |  | ARHR | 3h | 3h | 276.54 | 276.54 |
| 62 | 2.2.1.4.2 | **Mòdulo de Alumnos** |  | 1.56d | 2016-05-27 16:30 A | 2016-05-31 11:00 A | 61 | 100% |  |  |  | 12.5h | 12.5h | 1,152.25 | 1,152.25 |
| 63 | 2.2.1.4.2.1 | Interfaz |  | 1h | 2016-05-27 16:30 A | 2016-05-27 17:30 A |  | 100% |  |  | ARHR | 1h | 1h | 92.18 | 92.18 |
| 64 | 2.2.1.4.2.2 | Clases de Alumnos |  | 6h | 2016-05-27 17:30 A | 2016-05-30 15:30 A | 63 | 100% |  |  | ARHR | 6h | 6h | 553.08 | 553.08 |
| 65 | 2.2.1.4.2.3 | Conexion a BD |  | 0.5h | 2016-05-30 15:30 A | 2016-05-30 16:00 A | 64 | 100% |  |  | ARHR | 0.5h | 0.5h | 46.09 | 46.09 |
| 66 | 2.2.1.4.2.4 | Alta de Alumnos |  | 0.5h | 2016-05-30 16:00 A | 2016-05-30 16:30 A | 65 | 100% |  |  | ARHR | 0.5h | 0.5h | 46.09 | 46.09 |
| 67 | 2.2.1.4.2.5 | Baja de Alumnos |  | 0.5h | 2016-05-30 16:30 A | 2016-05-30 17:00 A | 66 | 100% |  |  | ARHR | 0.5h | 0.5h | 46.09 | 46.09 |
| 68 | 2.2.1.4.2.6 | Actualizaciòn de Alumnos |  | 1h | 2016-05-30 17:00 A | 2016-05-30 18:00 A | 67 | 100% |  |  | ARHR | 1h | 1h | 92.18 | 92.18 |
| 69 | 2.2.1.4.2.7 | Consulta de Alumnos |  | 1h | 2016-05-30 18:00 A | 2016-05-30 19:00 A | 68 | 100% |  |  | ARHR | 1h | 1h | 92.18 | 92.18 |
| 70 | 2.2.1.4.2.8 | Reportes de Alumnos |  | 2h | 2016-05-31 09:00 A | 2016-05-31 11:00 A | 69 | 100% |  |  | ARHR | 2h | 2h | 184.36 | 184.36 |
| 71 | 2.2.1.4.3 | **Mòdulo de Tutores** |  | 1.56d | 2016-05-31 11:00 A | 2016-06-01 17:30 A | 70 | 100% |  |  |  | 12.5h | 12.5h | 1,152.25 | 1,152.25 |
| 72 | 2.2.1.4.3.1 | Interfaz |  | 1h | 2016-05-31 11:00 A | 2016-05-31 12:00 A |  | 100% |  |  | ARHR | 1h | 1h | 92.18 | 92.18 |
| 73 | 2.2.1.4.3.2 | Clases de Tutores |  | 6h | 2016-05-31 12:00 A | 2016-06-01 10:00 A | 72 | 100% |  |  | ARHR | 6h | 6h | 553.08 | 553.08 |
| 74 | 2.2.1.4.3.3 | Conexion a BD |  | 0.5h | 2016-06-01 10:00 A | 2016-06-01 10:30 A | 73 | 100% |  |  | ARHR | 0.5h | 0.5h | 46.09 | 46.09 |
| 75 | 2.2.1.4.3.4 | Alta de Tutores |  | 0.5h | 2016-06-01 10:30 A | 2016-06-01 11:00 A | 74 | 100% |  |  | ARHR | 0.5h | 0.5h | 46.09 | 46.09 |
| 76 | 2.2.1.4.3.5 | Baja de Tutores |  | 0.5h | 2016-06-01 11:00 A | 2016-06-01 11:30 A | 75 | 100% |  |  | ARHR | 0.5h | 0.5h | 46.09 | 46.09 |
| 77 | 2.2.1.4.3.6 | Actualizaciòn de Tutores |  | 1h | 2016-06-01 11:30 A | 2016-06-01 12:30 A | 76 | 100% |  |  | ARHR | 1h | 1h | 92.18 | 92.18 |
| 78 | 2.2.1.4.3.7 | Consulta de Tutores |  | 1h | 2016-06-01 12:30 A | 2016-06-01 15:30 A | 77 | 100% |  |  | ARHR | 1h | 1h | 92.18 | 92.18 |
| 79 | 2.2.1.4.3.8 | Reportes de Tutores |  | 2h | 2016-06-01 15:30 A | 2016-06-01 17:30 A | 78 | 100% |  |  | ARHR | 2h | 2h | 184.36 | 184.36 |

Notes:
- 57: Realizar el diseño de modelo de entidad relación
- 58: Realiza el modelo relacional
- 61: Arranca la codificación de la base de datos
- 63: Realización de la interfaz del módulo de alumnos
- 64: Realización de las clases de los alumnos
- 65: Realización de la conexión a la base de datos
- 66: Realización de la codificación del alta a la tabla de alumnos
- 67: Realización de la codificación de la baja en la tabla de alumnos
- 68: Realización de la codificación de la actualización a la tabla de alumnos
- 69: Realización de las consultas correspondientes a la tabla alumnos
- 70: Realización del reporte de la tabla alumnos
- 72: Realización de la interfaz del módulo de tutores
- 73: Realización de las clases de los tutores
- 74: Realización de la conexión a la base de datos
- 75: Realización de la codificación del alta a la tabla de tutores
- 76: Realización de la codificación de la baja en la tabla de tutores
- 77: Realización de la codificación de la actualización a la tabla de tutores
- 78: Realización de las consultas correspondientes a la tabla tutores
- 79: Realización del reporte de la tabla tutores

| ID | WBS | Task | Duration | Start | Finish | Predecessors | Complete | Resources | Work | Actual work | Cost | Actual cost |
| --- | --- | --- | --- | --- | --- | --- | --- | --- | --- | --- | --- | --- |
| 80 | 2.2.1.4.4 | **Mòdulo de Canalizaciones** | 1.56d | 2016-06-01 17:30 A | 2016-06-03 12:00 A | 79 | 100% |  | 12.5h | 12.5h | 1,152.25 | 1,152.25 |
| 81 | 2.2.1.4.4.1 | Interfaz | 1h | 2016-06-01 17:30 A | 2016-06-01 18:30 A |  | 100% | ARHR | 1h | 1h | 92.18 | 92.18 |
| 82 | 2.2.1.4.4.2 | Clases de Canalizaciones | 6h | 2016-06-01 18:30 A | 2016-06-02 16:30 A | 81 | 100% | ARHR | 6h | 6h | 553.08 | 553.08 |
| 83 | 2.2.1.4.4.3 | Conexion a BD | 0.5h | 2016-06-02 16:30 A | 2016-06-02 17:00 A | 82 | 100% | ARHR | 0.5h | 0.5h | 46.09 | 46.09 |
| 84 | 2.2.1.4.4.4 | Alta de Canalizaciones | 0.5h | 2016-06-02 17:00 A | 2016-06-02 17:30 A | 83 | 100% | ARHR | 0.5h | 0.5h | 46.09 | 46.09 |
| 85 | 2.2.1.4.4.5 | Baja de Canalizaciones | 0.5h | 2016-06-02 17:30 A | 2016-06-02 18:00 A | 84 | 100% | ARHR | 0.5h | 0.5h | 46.09 | 46.09 |
| 86 | 2.2.1.4.4.6 | Actualizaciòn de Canalizaciones | 1h | 2016-06-02 18:00 A | 2016-06-02 19:00 A | 85 | 100% | ARHR | 1h | 1h | 92.18 | 92.18 |
| 87 | 2.2.1.4.4.7 | Consulta de Canalizaciones | 1h | 2016-06-03 09:00 A | 2016-06-03 10:00 A | 86 | 100% | ARHR | 1h | 1h | 92.18 | 92.18 |
| 88 | 2.2.1.4.4.8 | Reportes de Canalizaciones | 2h | 2016-06-03 10:00 A | 2016-06-03 12:00 A | 87 | 100% | ARHR | 2h | 2h | 184.36 | 184.36 |
| 89 | 2.2.1.4.5 | **Mòdulo de CanalizaciònGrupal** | 1.56d | 2016-06-03 12:00 A | 2016-06-06 18:30 A | 88 | 100% |  | 12.5h | 12.5h | 1,152.25 | 1,152.25 |
| 90 | 2.2.1.4.5.1 | Interfaz | 1h | 2016-06-03 12:00 A | 2016-06-03 13:00 A |  | 100% | ARHR | 1h | 1h | 92.18 | 92.18 |
| 91 | 2.2.1.4.5.2 | Clases de CanalizaciònGrupal | 6h | 2016-06-03 15:00 A | 2016-06-06 11:00 A | 90 | 100% | ARHR | 6h | 6h | 553.08 | 553.08 |
| 92 | 2.2.1.4.5.3 | Conexion a BD | 0.5h | 2016-06-06 11:00 A | 2016-06-06 11:30 A | 91 | 100% | ARHR | 0.5h | 0.5h | 46.09 | 46.09 |
| 93 | 2.2.1.4.5.4 | Alta de CanalizaciònGrupal | 0.5h | 2016-06-06 11:30 A | 2016-06-06 12:00 A | 92 | 100% | ARHR | 0.5h | 0.5h | 46.09 | 46.09 |
| 94 | 2.2.1.4.5.5 | Baja de CanalizaciònGrupal | 0.5h | 2016-06-06 12:00 A | 2016-06-06 12:30 A | 93 | 100% | ARHR | 0.5h | 0.5h | 46.09 | 46.09 |
| 95 | 2.2.1.4.5.6 | Actualizaciòn de CanalizaciònGrupal | 1h | 2016-06-06 12:30 A | 2016-06-06 15:30 A | 94 | 100% | ARHR | 1h | 1h | 92.18 | 92.18 |
| 96 | 2.2.1.4.5.7 | Consulta de CanalizaciònGrupal | 1h | 2016-06-06 15:30 A | 2016-06-06 16:30 A | 95 | 100% | ARHR | 1h | 1h | 92.18 | 92.18 |
| 97 | 2.2.1.4.5.8 | Reportes de CanalizaciònGrupal | 2h | 2016-06-06 16:30 A | 2016-06-06 18:30 A | 96 | 100% | ARHR | 2h | 2h | 184.36 | 184.36 |
| 98 | 2.2.1.4.6 | **Mòdulo de Asesorìa** | 1.56d | 2016-06-06 18:30 A | 2016-06-08 13:00 A | 97 | 100% |  | 12.5h | 12.5h | 1,152.25 | 1,152.25 |
| 99 | 2.2.1.4.6.1 | Interfaz | 1h | 2016-06-06 18:30 A | 2016-06-07 09:30 A |  | 100% | ARHR | 1h | 1h | 92.18 | 92.18 |
| 100 | 2.2.1.4.6.2 | Clases de Asesorìa | 6h | 2016-06-07 09:30 A | 2016-06-07 17:30 A | 99 | 100% | ARHR | 6h | 6h | 553.08 | 553.08 |
| 101 | 2.2.1.4.6.3 | Conexion a BD | 0.5h | 2016-06-07 17:30 A | 2016-06-07 18:00 A | 100 | 100% | ARHR | 0.5h | 0.5h | 46.09 | 46.09 |
| 102 | 2.2.1.4.6.4 | Alta de Asesorìa | 0.5h | 2016-06-07 18:00 A | 2016-06-07 18:30 A | 101 | 100% | ARHR | 0.5h | 0.5h | 46.09 | 46.09 |
| 103 | 2.2.1.4.6.5 | Baja de Asesorìa | 0.5h | 2016-06-07 18:30 A | 2016-06-07 19:00 A | 102 | 100% | ARHR | 0.5h | 0.5h | 46.09 | 46.09 |
| 104 | 2.2.1.4.6.6 | Actualizaciòn de Asesorìa | 1h | 2016-06-08 09:00 A | 2016-06-08 10:00 A | 103 | 100% | ARHR | 1h | 1h | 92.18 | 92.18 |
| 105 | 2.2.1.4.6.7 | Consulta de Asesorìa | 1h | 2016-06-08 10:00 A | 2016-06-08 11:00 A | 104 | 100% | ARHR | 1h | 1h | 92.18 | 92.18 |
| 106 | 2.2.1.4.6.8 | Reportes de Asesorìa | 2h | 2016-06-08 11:00 A | 2016-06-08 13:00 A | 105 | 100% | ARHR | 2h | 2h | 184.36 | 184.36 |

Notes:
- 81: Realización de la interfaz del módulo de canalizaciones
- 82: Realización de las clases de los canalizaciones
- 83: Realización de la conexión a la base de datos
- 84: Realización de la codificación del alta a la tabla de canalizaciones
- 85: Realización de la codificación de la baja en la tabla de canalizaciones
- 86: Realización de la codificación de la actualización a la tabla de canalizaciones
- 87: Realización de las consultas correspondientes a la tabla canalizaciones
- 88: Realización del reporte de la tabla canalizaciones
- 90: Realización de la interfaz del módulo de canalizaciones grupales
- 91: Realización de las clases de los canalizaciones grupales
- 92: Realización de la conexión a la base de datos
- 93: Realización de la codificación del alta a la tabla de canalizaciones grupales
- 94: Realización de la codificación de la baja en la tabla de canalizaciones grupales
- 95: Realización de la codificación de la actualización a la tabla de canalizaciones grupales
- 96: Realización de las consultas correspondientes a la tabla canalizaciones grupales
- 97: Realización del reporte de la tabla canalizaciones grupales
- 99: Realización de la interfaz del módulo de asesoría
- 100: Realización de las clases de los asesoría
- 101: Realización de la conexión a la base de datos
- 102: Realización de la codificación del alta a la tabla de asesoría
- 103: Realización de la codificación de la baja en la tabla de asesoría
- 104: Realización de la codificación de la actualización a la tabla de asesoría
- 105: Realización de las consultas correspondientes a la tabla asesoría
- 106: Realización del reporte de la tabla asesoría

| ID | WBS | Task | Type | Duration | Start | Finish | Predecessors | Complete | Remaining | Total slack | Resources | Work | Actual work | Cost | Actual cost |
| --- | --- | --- | --- | --- | --- | --- | --- | --- | --- | --- | --- | --- | --- | --- | --- |
| 107 | 2.2.1.4.7 | **Mòdulo de Grupos** |  | 1.56d | 2016-06-08 15:00 A | 2016-06-10 09:30 A | 106 | 100% |  |  |  | 12.5h | 12.5h | 1,152.25 | 1,152.25 |
| 108 | 2.2.1.4.7.1 | Interfaz |  | 1h | 2016-06-08 15:00 A | 2016-06-08 16:00 A |  | 100% |  |  | ARHR | 1h | 1h | 92.18 | 92.18 |
| 109 | 2.2.1.4.7.2 | Clases de Grupos |  | 6h | 2016-06-08 16:00 A | 2016-06-09 12:00 A | 108 | 100% |  |  | ARHR | 6h | 6h | 553.08 | 553.08 |
| 110 | 2.2.1.4.7.3 | Conexion a BD |  | 0.5h | 2016-06-09 12:00 A | 2016-06-09 12:30 A | 109 | 100% |  |  | ARHR | 0.5h | 0.5h | 46.09 | 46.09 |
| 111 | 2.2.1.4.7.4 | Alta de Grupos |  | 0.5h | 2016-06-09 12:30 A | 2016-06-09 13:00 A | 110 | 100% |  |  | ARHR | 0.5h | 0.5h | 46.09 | 46.09 |
| 112 | 2.2.1.4.7.5 | Baja de Grupos |  | 0.5h | 2016-06-09 15:00 A | 2016-06-09 15:30 A | 111 | 100% |  |  | ARHR | 0.5h | 0.5h | 46.09 | 46.09 |
| 113 | 2.2.1.4.7.6 | Actualizaciòn de Grupos |  | 1h | 2016-06-09 15:30 A | 2016-06-09 16:30 A | 112 | 100% |  |  | ARHR | 1h | 1h | 92.18 | 92.18 |
| 114 | 2.2.1.4.7.7 | Consulta de Grupos |  | 1h | 2016-06-09 16:30 A | 2016-06-09 17:30 A | 113 | 100% |  |  | ARHR | 1h | 1h | 92.18 | 92.18 |
| 115 | 2.2.1.4.7.8 | Reportes de Grupos |  | 2h | 2016-06-09 17:30 A | 2016-06-10 09:30 A | 114 | 100% |  |  | ARHR | 2h | 2h | 184.36 | 184.36 |
| 116 | 2.2.1.4.8 | **Login** |  | 2d | 2016-06-10 09:30 A | 2016-06-14 09:30 | 115 | 99% | 0d | 24.69d |  | 16h | 16h | 1,474.88 | 1,474.88 |
| 117 | 2.2.1.4.8.1 | Interfaz |  | 8h | 2016-06-10 09:30 A | 2016-06-13 09:30 A |  | 100% |  |  | ARHR | 8h | 8h | 737.44 | 737.44 |
| 118 | 2.2.1.4.8.2 | Validación |  | 8h | 2016-06-13 09:30 A | 2016-06-14 09:30 A | 117FS-4h | 100% |  |  | ARHR | 8h | 8h | 737.44 | 737.44 |
| 119 | 2.2.1.4.8.3 | Entrega de base de datos, reporte de módulo clientes, productos, ventas, categoría, proveedores y login. | milestone | 0d | 2016-06-10 09:30 | 2016-06-10 09:30 |  |  |  | 26.69d |  |  |  |  |  |
| 120 | 2.2.1.5 | **Pruebas** |  | 3.81d | 2016-06-14 09:30 A | 2016-06-17 18:00 | 118 | 99% | 0d | 20.88d |  | 30.5h | 30.5h | 3,225.07 | 3,225.07 |
| 121 | 2.2.1.5.1 | **Pruebas de caja blanca** |  | 3.81d | 2016-06-14 09:30 A | 2016-06-17 18:00 |  | 99% | 0d | 20.88d |  | 30.5h | 30.5h | 3,225.07 | 3,225.07 |
| 122 | 2.2.1.5.1.1 | **Mòdulo de Alumnos** |  | 0.31d | 2016-06-14 09:30 A | 2016-06-14 12:00 A |  | 100% |  |  |  | 2.5h | 2.5h | 264.35 | 264.35 |
| 123 | 2.2.1.5.1.1.1 | Pruebas Unitarias |  | 1.5h | 2016-06-14 09:30 A | 2016-06-14 11:00 A |  | 100% |  |  | ASC | 1.5h | 1.5h | 158.61 | 158.61 |
| 124 | 2.2.1.5.1.1.2 | Pruebas de Modulo |  | 1h | 2016-06-14 11:00 A | 2016-06-14 12:00 A | 123 | 100% |  |  | ASC | 1h | 1h | 105.74 | 105.74 |
| 125 | 2.2.1.5.1.2 | **Mòdulo de Tutores** |  | 0.31d | 2016-06-14 12:00 A | 2016-06-14 16:30 A | 124 | 100% |  |  |  | 2.5h | 2.5h | 264.35 | 264.35 |
| 126 | 2.2.1.5.1.2.1 | Pruebas Unitarias |  | 1.5h | 2016-06-14 12:00 A | 2016-06-14 15:30 A |  | 100% |  |  | ASC | 1.5h | 1.5h | 158.61 | 158.61 |
| 127 | 2.2.1.5.1.2.2 | Pruebas de Modulo |  | 1h | 2016-06-14 15:30 A | 2016-06-14 16:30 A | 126 | 100% |  |  | ASC | 1h | 1h | 105.74 | 105.74 |
| 128 | 2.2.1.5.1.3 | **Mòdulo de Canalizaciones** |  | 0.31d | 2016-06-14 16:30 A | 2016-06-14 19:00 A | 127 | 100% |  |  |  | 2.5h | 2.5h | 264.35 | 264.35 |
| 129 | 2.2.1.5.1.3.1 | Pruebas Unitarias |  | 1.5h | 2016-06-14 16:30 A | 2016-06-14 18:00 A |  | 100% |  |  | ASC | 1.5h | 1.5h | 158.61 | 158.61 |
| 130 | 2.2.1.5.1.3.2 | Pruebas de Modulo |  | 1h | 2016-06-14 18:00 A | 2016-06-14 19:00 A | 129 | 100% |  |  | ASC | 1h | 1h | 105.74 | 105.74 |

Notes:
- 108: Realización de la interfaz del módulo de grupos
- 109: Realización de las clases de los grupos
- 110: Realización de la conexión a la base de datos
- 111: Realización de la codificación del alta a la tabla de grupos
- 112: Realización de la codificación de la baja en la tabla de grupos
- 113: Realización de la codificación de la actualización a la tabla de grupos
- 114: Realización de las consultas correspondientes a la tabla grupos
- 115: Realización del reporte de la tabla grupos
- 117: Realización de la interfaz del login
- 118: Validanción de los campos de los formularios del login
- 123: Realización de las pruebas unitarias al módulo alumnos
- 124: Realización de pruebas de módulo a la tabla alumnos
- 126: Realización de las pruebas unitarias al módulo tutores
- 127: Realización de pruebas de módulo a la tabla tutores
- 129: Realización de las pruebas unitarias al módulo canalizaciones
- 130: Realización de pruebas de módulo a la tabla canalizaciones

| ID | WBS | Task | Type | Duration | Start | Finish | Predecessors | Complete | Remaining | Total slack | Resources | Work | Actual work | Cost | Actual cost |
| --- | --- | --- | --- | --- | --- | --- | --- | --- | --- | --- | --- | --- | --- | --- | --- |
| 131 | 2.2.1.5.1.4 | **Mòdulo de CanalizaciònGrupal** |  | 0.31d | 2016-06-15 09:00 A | 2016-06-15 11:30 A | 130FS-0.5h | 100% |  |  |  | 2.5h | 2.5h | 264.35 | 264.35 |
| 132 | 2.2.1.5.1.4.1 | Pruebas Unitarias |  | 1.5h | 2016-06-15 09:00 A | 2016-06-15 10:30 A |  | 100% |  |  | ASC | 1.5h | 1.5h | 158.61 | 158.61 |
| 133 | 2.2.1.5.1.4.2 | Pruebas de Modulo |  | 1h | 2016-06-15 10:30 A | 2016-06-15 11:30 A | 132 | 100% |  |  | ASC | 1h | 1h | 105.74 | 105.74 |
| 134 | 2.2.1.5.1.5 | **Mòdulo de Grupos** |  | 0.31d | 2016-06-15 11:30 A | 2016-06-15 16:00 A | 133 | 100% |  |  |  | 2.5h | 2.5h | 264.35 | 264.35 |
| 135 | 2.2.1.5.1.5.1 | Pruebas Unitarias |  | 1.5h | 2016-06-15 11:30 A | 2016-06-15 13:00 A |  | 100% |  |  | ASC | 1.5h | 1.5h | 158.61 | 158.61 |
| 136 | 2.2.1.5.1.5.2 | Pruebas de Modulo |  | 1h | 2016-06-15 15:00 A | 2016-06-15 16:00 A | 135 | 100% |  |  | ASC | 1h | 1h | 105.74 | 105.74 |
| 137 | 2.2.1.5.1.6 | **Login** |  | 2.25d | 2016-06-15 16:00 A | 2016-06-17 18:00 | 136 | 99% | 0d | 20.88d |  | 18h | 18h | 1,903.32 | 1,903.32 |
| 138 | 2.2.1.5.1.6.1 | Pruebas de stress |  | 4h | 2016-06-15 16:00 A | 2016-06-16 10:00 A |  | 100% |  |  | ASC | 4h | 4h | 422.96 | 422.96 |
| 139 | 2.2.1.5.1.6.2 | Pruebas de carga |  | 6h | 2016-06-16 10:00 A | 2016-06-16 18:00 A | 138FS-2h | 100% |  |  | ASC | 6h | 6h | 634.44 | 634.44 |
| 140 | 2.2.1.5.1.6.3 | Pruebas del sistema |  | 8h | 2016-06-16 18:00 A | 2016-06-17 18:00 A | 139 | 100% |  |  | ASC | 8h | 8h | 845.92 | 845.92 |
| 141 | 2.2.1.5.1.6.4 | Entrega de resultados de pruebas de módulo de clientes, productos, ventas, categoría, proveedores y login. | milestone | 0d | 2016-06-15 16:00 | 2016-06-15 16:00 |  |  |  | 23.12d |  |  |  |  |  |
| 142 | 2.2.2 | **FaseDos/IteraciónDos** |  | 17.44d | 2016-06-17 18:00 A | 2016-07-13 11:30 | 140FS-2h | 99% | 0d | 3.44d |  | 139.5h | 139.5h | 15,855.32 | 15,855.32 |
| 143 | 2.2.2.1 | **Análisis** |  | 3.94d | 2016-06-17 18:00 A | 2016-06-23 17:30 A |  | 100% |  |  |  | 31.5h | 31.5h | 4,578.65 | 4,578.65 |
| 144 | 2.2.2.1.1 | **Elicitación** |  | 2.5d | 2016-06-17 18:00 A | 2016-06-22 12:00 A |  | 100% |  |  |  | 20h | 20h | 2,919 | 2,919 |
| 145 | 2.2.2.1.1.1 | Identificar procesos del sistema |  | 8h | 2016-06-17 18:00 A | 2016-06-20 18:00 A |  | 100% |  |  | BAPG | 8h | 8h | 1,167.6 | 1,167.6 |
| 146 | 2.2.2.1.1.2 | Identificar requerimientos funcionales |  | 8h | 2016-06-20 18:00 A | 2016-06-21 18:00 A | 145 | 100% |  |  | BAPG | 8h | 8h | 1,167.6 | 1,167.6 |
| 147 | 2.2.2.1.1.3 | Identificar requerimientos no funcionales |  | 4h | 2016-06-21 18:00 A | 2016-06-22 12:00 A | 146 | 100% |  |  | BAPG | 4h | 4h | 583.8 | 583.8 |
| 148 | 2.2.2.1.2 | **Especificación** |  | 1d | 2016-06-22 12:00 A | 2016-06-23 12:00 A |  | 100% |  |  |  | 8h | 8h | 1,167.6 | 1,167.6 |
| 149 | 2.2.2.1.2.1 | Evaluación de requerimientos |  | 2h | 2016-06-22 12:00 A | 2016-06-22 16:00 A | 147 | 100% |  |  | BAPG | 2h | 2h | 291.9 | 291.9 |
| 150 | 2.2.2.1.2.2 | SRS |  | 6h | 2016-06-22 16:00 A | 2016-06-23 12:00 A | 149 | 100% |  |  | BAPG | 6h | 6h | 875.7 | 875.7 |
| 151 | 2.2.2.1.3 | **Gestión de requerimientos** |  | 0.44d | 2016-06-23 12:00 A | 2016-06-23 17:30 A | 150 | 100% |  |  |  | 3.5h | 3.5h | 492.05 | 492.05 |
| 152 | 2.2.2.1.3.1 | Priorizar los requerimientos |  | 2h | 2016-06-23 12:00 A | 2016-06-23 16:00 A |  | 100% |  |  | BAPG | 2h | 2h | 291.9 | 291.9 |
| 153 | 2.2.2.1.3.2 | Almacenar en repositorio |  | 0.5h | 2016-06-23 16:00 A | 2016-06-23 16:30 A | 152 | 100% |  |  | SDL | 0.5h | 0.5h | 54.2 | 54.2 |
| 154 | 2.2.2.1.3.3 | Asignar a desarrolladores de software |  | 1h | 2016-06-23 16:30 A | 2016-06-23 17:30 A | 153 | 100% |  |  | BAPG | 1h | 1h | 145.95 | 145.95 |
| 155 | 2.2.2.1.3.4 | Entrega de procesos del sistema y SRS | milestone, manual | 0d | 2016-06-23 12:00 A | 2016-06-23 12:00 A |  | 100% |  |  |  |  |  |  |  |

Notes:
- 132: Realización de las pruebas unitarias al módulo canalización grupal
- 133: Realización de pruebas de módulo a la tabla canalización grupal
- 135: Realización de las pruebas unitarias al módulo grupos
- 136: Realización de pruebas de módulo a la tabla grupos
- 138: Realización de las pruebas de stress a login
- 139: Realización de las pruebas de carga a login
- 140: Realización de las pruebas de sistemas a los modulos
- 145: Identificar los nuevos procesos que deberá tener el sistema
- 146: Identificar los nuevos requerimientos funcionales o modificar algunos si es necesario
- 147: Identificar los nuevos requerimientos no funcionales o se modifican algunos si es necesario
- 149: Evaluar los nuevos requerimientos
- 150: Actualizar el SRS
- 152: Priorizar los nuevos requerimientos
- 153: Realizar una copia de respaldo en el repositorio
- 154: Asignar los nuevos encargados de las tareas

| ID | WBS | Task | Type | Duration | Start | Finish | Predecessors | Complete | Remaining | Total slack | Resources | Work | Actual work | Cost | Actual cost |
| --- | --- | --- | --- | --- | --- | --- | --- | --- | --- | --- | --- | --- | --- | --- | --- |
| 156 | 2.2.2.2 | **Planificación** |  | 2.12d | 2016-06-23 17:30 A | 2016-06-27 18:30 | 154 | 99% | 0d | 14.81d |  | 17h | 17h | 2,443.59 | 2,443.59 |
| 157 | 2.2.2.2.1 | Actualizar plan de proyecto |  | 2h | 2016-06-23 17:30 A | 2016-06-24 09:30 A |  | 100% |  |  | BAPG | 2h | 2h | 291.9 | 291.9 |
| 158 | 2.2.2.2.2 | **Estimación** |  | 0.25d | 2016-06-24 09:30 A | 2016-06-24 11:30 A | 157 | 100% |  |  |  | 2h | 2h | 254.34 | 254.34 |
| 159 | 2.2.2.2.2.1 | Actualizar diccionario del WBS |  | 1h | 2016-06-24 09:30 A | 2016-06-24 10:30 A |  | 100% |  |  | SDL | 1h | 1h | 108.39 | 108.39 |
| 160 | 2.2.2.2.2.2 | Actualizar costos |  | 1h | 2016-06-24 10:30 A | 2016-06-24 11:30 A | 159 | 100% |  |  | BAPG | 1h | 1h | 145.95 | 145.95 |
| 161 | 2.2.2.2.3 | **Riesgos** |  | 1.62d | 2016-06-24 11:30 A | 2016-06-27 18:30 | 160 | 99% | 0d | 14.81d |  | 13h | 13h | 1,897.35 | 1,897.35 |
| 162 | 2.2.2.2.3.1 | Identificación de nuevos riesgos |  | 6h | 2016-06-24 11:30 A | 2016-06-27 09:30 A |  | 100% |  |  | BAPG | 6h | 6h | 875.7 | 875.7 |
| 163 | 2.2.2.2.3.2 | Asignación de prioridades |  | 2h | 2016-06-27 09:30 A | 2016-06-27 11:30 A | 162 | 100% |  |  | BAPG | 2h | 2h | 291.9 | 291.9 |
| 164 | 2.2.2.2.3.3 | Plan de mitigación y contingencia |  | 4h | 2016-06-27 11:30 A | 2016-06-27 17:30 A | 163 | 100% |  |  | BAPG | 4h | 4h | 583.8 | 583.8 |
| 165 | 2.2.2.2.3.4 | **Aseguramiento de la calidad** |  | 0.12d | 2016-06-27 17:30 A | 2016-06-27 18:30 | 164 | 99% | 0d | 14.81d |  | 1h | 1h | 145.95 | 145.95 |
| 166 | 2.2.2.2.3.4.1 | Junta de arranque de construcción |  | 1h | 2016-06-27 17:30 A | 2016-06-27 18:30 A |  | 100% |  |  | BAPG | 1h | 1h | 145.95 | 145.95 |
| 167 | 2.2.2.2.3.4.2 | Entrega del nuevo plan del proyecto, actualización del WBS, nuevos riesgos, prioridades de los riesgos, nuevo plan de mitigación y contingencia y junta de arranque de construcción | milestone | 0d | 2016-06-27 17:30 | 2016-06-27 17:30 |  |  |  | 14.94d |  |  |  |  |  |
| 168 | 2.2.2.3 | **Diseño** |  | 2d | 2016-06-27 18:30 A | 2016-06-29 18:30 | 166 | 99% | 0d | 12.81d |  | 16h | 16h | 1,750.08 | 1,750.08 |
| 169 | 2.2.2.3.1 | Diagramas de caso de uso |  | 4h | 2016-06-27 18:30 A | 2016-06-28 12:30 A |  | 100% |  |  | BAPG | 4h | 4h | 437.52 | 437.52 |
| 170 | 2.2.2.3.2 | Diagramas de secuencia |  | 2h | 2016-06-28 12:30 A | 2016-06-28 16:30 A | 169 | 100% |  |  | BAPG | 2h | 2h | 218.76 | 218.76 |
| 171 | 2.2.2.3.3 | Actualizar diagramas de componentes |  | 1h | 2016-06-28 16:30 A | 2016-06-28 17:30 A | 170 | 100% |  |  | BAPG | 1h | 1h | 109.38 | 109.38 |
| 172 | 2.2.2.3.4 | Diagramas de despliegues |  | 2h | 2016-06-28 17:30 A | 2016-06-29 09:30 A | 171 | 100% |  |  | BAPG | 2h | 2h | 218.76 | 218.76 |
| 173 | 2.2.2.3.5 | Mapa de navegación |  | 1h | 2016-06-29 09:30 A | 2016-06-29 10:30 A | 172 | 100% |  |  | BAPG | 1h | 1h | 109.38 | 109.38 |
| 174 | 2.2.2.3.6 | Maquetación |  | 6h | 2016-06-29 10:30 A | 2016-06-29 18:30 A | 173 | 100% |  |  | BAPG | 6h | 6h | 656.28 | 656.28 |
| 175 | 2.2.2.3.7 | Entrega de nuevos casos de uso, de secuencia, componentes, despliegues del mapa de navegación y de la maquetación | milestone | 0d | 2016-06-27 18:30 | 2016-06-27 18:30 |  |  |  | 14.81d |  |  |  |  |  |
| 176 | 2.2.2.4 | **Codificación** |  | 7.81d | 2016-06-29 18:30 A | 2016-07-11 17:00 A | 174 | 100% |  |  |  | 62.5h | 62.5h | 5,761.25 | 5,761.25 |
| 177 | 2.2.2.4.1 | **Mòdulo de Generaciones** |  | 1.56d | 2016-06-29 18:30 A | 2016-07-01 13:00 A |  | 100% |  |  |  | 12.5h | 12.5h | 1,152.25 | 1,152.25 |
| 178 | 2.2.2.4.1.1 | Interfaz |  | 1h | 2016-06-29 18:30 A | 2016-06-30 09:30 A |  | 100% |  |  | ARHR | 1h | 1h | 92.18 | 92.18 |
| 179 | 2.2.2.4.1.2 | Clases de Generaciones |  | 6h | 2016-06-30 09:30 A | 2016-06-30 17:30 A | 178 | 100% |  |  | ARHR | 6h | 6h | 553.08 | 553.08 |
| 180 | 2.2.2.4.1.3 | Conexion a BD |  | 0.5h | 2016-06-30 17:30 A | 2016-06-30 18:00 A | 179 | 100% |  |  | ARHR | 0.5h | 0.5h | 46.09 | 46.09 |
| 181 | 2.2.2.4.1.4 | Alta de Generaciones |  | 0.5h | 2016-06-30 18:00 A | 2016-06-30 18:30 A | 180 | 100% |  |  | ARHR | 0.5h | 0.5h | 46.09 | 46.09 |
| 182 | 2.2.2.4.1.5 | Baja de Generaciones |  | 0.5h | 2016-06-30 18:30 A | 2016-06-30 19:00 A | 181 | 100% |  |  | ARHR | 0.5h | 0.5h | 46.09 | 46.09 |
| 183 | 2.2.2.4.1.6 | Actualizaciòn de Generaciones |  | 1h | 2016-07-01 09:00 A | 2016-07-01 10:00 A | 182 | 100% |  |  | ARHR | 1h | 1h | 92.18 | 92.18 |
| 184 | 2.2.2.4.1.7 | Consulta de Generaciones |  | 1h | 2016-07-01 10:00 A | 2016-07-01 11:00 A | 183 | 100% |  |  | ARHR | 1h | 1h | 92.18 | 92.18 |
| 185 | 2.2.2.4.1.8 | Reportes de Generaciones |  | 2h | 2016-07-01 11:00 A | 2016-07-01 13:00 A | 184 | 100% |  |  | ARHR | 2h | 2h | 184.36 | 184.36 |

Notes:
- 157: Actualizar el nuevo plan del proyecto
- 159: Actualización el diccionario WBS si es necesario
- 160: Actualización de los costos
- 162: Identificación de los nuevos riegos o actualizar los que ya se tenían
- 163: Asignación de prioridades a los nuevos riegos
- 164: Realizar un nuevo plan de mitigación y contingencia
- 166: Revisión de los productos necesarios para arrancar el sistema
- 169: Elaboración de los nuevos casos de uso
- 170: Elaboración de los nuevos diagrmas de secuencia
- 171: Actualización del diagrama de componentes
- 172: Elaboración del nuevo diagrama de despliegues
- 173: Elaboración del nuevo mapa de navegación
- 174: Elaboración de nueva maquetación
- 178: Realización de la interfaz del módulo de generaciones
- 179: Realización de las clases de los generaciones
- 180: Realización de la conexión a la base de datos
- 181: Realización de la codificación del alta a la tabla de generaciones
- 182: Realización de la codificación de la baja en la tabla de generaciones
- 183: Realización de la codificación de la actualización a la tabla de generaciones
- 184: Realización de las consultas correspondientes a la tabla generaciones
- 185: Realización del reporte de la tabla generaciones

| ID | WBS | Task | Duration | Start | Finish | Predecessors | Complete | Resources | Work | Actual work | Cost | Actual cost |
| --- | --- | --- | --- | --- | --- | --- | --- | --- | --- | --- | --- | --- |
| 186 | 2.2.2.4.2 | **Mòdulo HistorialAcadèmico** | 1.56d | 2016-07-01 15:00 A | 2016-07-05 09:30 A | 185 | 100% |  | 12.5h | 12.5h | 1,152.25 | 1,152.25 |
| 187 | 2.2.2.4.2.1 | Interfaz | 1h | 2016-07-01 15:00 A | 2016-07-01 16:00 A |  | 100% | ARHR | 1h | 1h | 92.18 | 92.18 |
| 188 | 2.2.2.4.2.2 | Clases de HistorialAcadèmico | 6h | 2016-07-01 16:00 A | 2016-07-04 12:00 A | 187 | 100% | ARHR | 6h | 6h | 553.08 | 553.08 |
| 189 | 2.2.2.4.2.3 | Conexion a BD | 0.5h | 2016-07-04 12:00 A | 2016-07-04 12:30 A | 188 | 100% | ARHR | 0.5h | 0.5h | 46.09 | 46.09 |
| 190 | 2.2.2.4.2.4 | Alta de HistorialAcadèmico | 0.5h | 2016-07-04 12:30 A | 2016-07-04 13:00 A | 189 | 100% | ARHR | 0.5h | 0.5h | 46.09 | 46.09 |
| 191 | 2.2.2.4.2.5 | Baja de HistorialAcadèmico | 0.5h | 2016-07-04 15:00 A | 2016-07-04 15:30 A | 190 | 100% | ARHR | 0.5h | 0.5h | 46.09 | 46.09 |
| 192 | 2.2.2.4.2.6 | Actualizaciòn de HistorialAcadèmico | 1h | 2016-07-04 15:30 A | 2016-07-04 16:30 A | 191 | 100% | ARHR | 1h | 1h | 92.18 | 92.18 |
| 193 | 2.2.2.4.2.7 | Consulta de HistorialAcadèmico | 1h | 2016-07-04 16:30 A | 2016-07-04 17:30 A | 192 | 100% | ARHR | 1h | 1h | 92.18 | 92.18 |
| 194 | 2.2.2.4.2.8 | Reportes de HistorialAcadèmico | 2h | 2016-07-04 17:30 A | 2016-07-05 09:30 A | 193 | 100% | ARHR | 2h | 2h | 184.36 | 184.36 |
| 195 | 2.2.2.4.3 | **Mòdulo HistorialMèdico** | 1.56d | 2016-07-05 09:30 A | 2016-07-06 16:00 A | 194 | 100% |  | 12.5h | 12.5h | 1,152.25 | 1,152.25 |
| 196 | 2.2.2.4.3.1 | Interfaz | 1h | 2016-07-05 09:30 A | 2016-07-05 10:30 A |  | 100% | ARHR | 1h | 1h | 92.18 | 92.18 |
| 197 | 2.2.2.4.3.2 | Clases de HistorialMèdico | 6h | 2016-07-05 10:30 A | 2016-07-05 18:30 A | 196 | 100% | ARHR | 6h | 6h | 553.08 | 553.08 |
| 198 | 2.2.2.4.3.3 | Conexion a BD | 0.5h | 2016-07-05 18:30 A | 2016-07-05 19:00 A | 197 | 100% | ARHR | 0.5h | 0.5h | 46.09 | 46.09 |
| 199 | 2.2.2.4.3.4 | Alta de HistorialMèdico | 0.5h | 2016-07-06 09:00 A | 2016-07-06 09:30 A | 198 | 100% | ARHR | 0.5h | 0.5h | 46.09 | 46.09 |
| 200 | 2.2.2.4.3.5 | Baja de HistorialMèdico | 0.5h | 2016-07-06 09:30 A | 2016-07-06 10:00 A | 199 | 100% | ARHR | 0.5h | 0.5h | 46.09 | 46.09 |
| 201 | 2.2.2.4.3.6 | Actualizaciòn de HistorialMèdico | 1h | 2016-07-06 10:00 A | 2016-07-06 11:00 A | 200 | 100% | ARHR | 1h | 1h | 92.18 | 92.18 |
| 202 | 2.2.2.4.3.7 | Consulta de HistorialMèdico | 1h | 2016-07-06 11:00 A | 2016-07-06 12:00 A | 201 | 100% | ARHR | 1h | 1h | 92.18 | 92.18 |
| 203 | 2.2.2.4.3.8 | Reportes de HistorialMèdico | 2h | 2016-07-06 12:00 A | 2016-07-06 16:00 A | 202 | 100% | ARHR | 2h | 2h | 184.36 | 184.36 |
| 204 | 2.2.2.4.4 | **Mòdulo HistorialEconòmio** | 1.56d | 2016-07-06 16:00 A | 2016-07-08 10:30 A | 203 | 100% |  | 12.5h | 12.5h | 1,152.25 | 1,152.25 |
| 205 | 2.2.2.4.4.1 | Interfaz | 1h | 2016-07-06 16:00 A | 2016-07-06 17:00 A |  | 100% | ARHR | 1h | 1h | 92.18 | 92.18 |
| 206 | 2.2.2.4.4.2 | Clases de HistorialEconòmio | 6h | 2016-07-06 17:00 A | 2016-07-07 13:00 A | 205 | 100% | ARHR | 6h | 6h | 553.08 | 553.08 |
| 207 | 2.2.2.4.4.3 | Conexion a BD | 0.5h | 2016-07-07 15:00 A | 2016-07-07 15:30 A | 206 | 100% | ARHR | 0.5h | 0.5h | 46.09 | 46.09 |
| 208 | 2.2.2.4.4.4 | Alta de HistorialEconòmio | 0.5h | 2016-07-07 15:30 A | 2016-07-07 16:00 A | 207 | 100% | ARHR | 0.5h | 0.5h | 46.09 | 46.09 |
| 209 | 2.2.2.4.4.5 | Baja de Asesorìa | 0.5h | 2016-07-07 16:00 A | 2016-07-07 16:30 A | 208 | 100% | ARHR | 0.5h | 0.5h | 46.09 | 46.09 |
| 210 | 2.2.2.4.4.6 | Actualizaciòn de HistorialEconòmio | 1h | 2016-07-07 16:30 A | 2016-07-07 17:30 A | 209 | 100% | ARHR | 1h | 1h | 92.18 | 92.18 |
| 211 | 2.2.2.4.4.7 | Consulta de HistorialEconòmio | 1h | 2016-07-07 17:30 A | 2016-07-07 18:30 A | 210 | 100% | ARHR | 1h | 1h | 92.18 | 92.18 |
| 212 | 2.2.2.4.4.8 | Reportes de HistorialEconòmio | 2h | 2016-07-07 18:30 A | 2016-07-08 10:30 A | 211 | 100% | ARHR | 2h | 2h | 184.36 | 184.36 |

Notes:
- 187: Realización de la interfaz del módulo de historial académico
- 188: Realización de las clases de los historial académico
- 189: Realización de la conexión a la base de datos
- 190: Realización de la codificación del alta a la tabla de historial académico
- 191: Realización de la codificación de la baja en la tabla de historial académico
- 192: Realización de la codificación de la actualización a la tabla de historial académico
- 193: Realización de las consultas correspondientes a la tabla historial académico
- 194: Realización del reporte de la tabla historial académico
- 196: Realización de la interfaz del módulo de historial médico
- 197: Realización de las clases de los historial médico
- 198: Realización de la conexión a la base de datos
- 199: Realización de la codificación del alta a la tabla de historial médico
- 200: Realización de la codificación de la baja en la tabla de historial médico
- 201: Realización de la codificación de la actualización a la tabla de historial médico
- 202: Realización de las consultas correspondientes a la tabla historial médico
- 203: Realización del reporte de la tabla historial médico
- 205: Realización de la interfaz del módulo de historial económico
- 206: Realización de las clases de los historial económico
- 207: Realización de la conexión a la base de datos
- 208: Realización de la codificación del alta a la tabla de historial económico
- 209: Realización de la codificación de la baja en la tabla de historial económico
- 210: Realización de la codificación de la actualización a la tabla de historial económico
- 211: Realización de las consultas correspondientes a la tabla historial económico
- 212: Realización del reporte de la tabla historial económico

| ID | WBS | Task | Type | Duration | Start | Finish | Predecessors | Complete | Remaining | Total slack | Resources | Work | Actual work | Cost | Actual cost |
| --- | --- | --- | --- | --- | --- | --- | --- | --- | --- | --- | --- | --- | --- | --- | --- |
| 213 | 2.2.2.4.5 | **Mòdulo HistorialFamiliar** |  | 1.56d | 2016-07-08 10:30 A | 2016-07-11 17:00 A | 212 | 100% |  |  |  | 12.5h | 12.5h | 1,152.25 | 1,152.25 |
| 214 | 2.2.2.4.5.1 | Interfaz |  | 1h | 2016-07-08 10:30 A | 2016-07-08 11:30 A |  | 100% |  |  | ARHR | 1h | 1h | 92.18 | 92.18 |
| 215 | 2.2.2.4.5.2 | Clases de HistorialFamiliar |  | 6h | 2016-07-08 11:30 A | 2016-07-11 09:30 A | 214 | 100% |  |  | ARHR | 6h | 6h | 553.08 | 553.08 |
| 216 | 2.2.2.4.5.3 | Conexion a BD |  | 0.5h | 2016-07-11 09:30 A | 2016-07-11 10:00 A | 215 | 100% |  |  | ARHR | 0.5h | 0.5h | 46.09 | 46.09 |
| 217 | 2.2.2.4.5.4 | Alta de HistorialFamiliar |  | 0.5h | 2016-07-11 10:00 A | 2016-07-11 10:30 A | 216 | 100% |  |  | ARHR | 0.5h | 0.5h | 46.09 | 46.09 |
| 218 | 2.2.2.4.5.5 | Baja de HistorialFamiliar |  | 0.5h | 2016-07-11 10:30 A | 2016-07-11 11:00 A | 217 | 100% |  |  | ARHR | 0.5h | 0.5h | 46.09 | 46.09 |
| 219 | 2.2.2.4.5.6 | Actualizaciòn de HistorialFamiliar |  | 1h | 2016-07-11 11:00 A | 2016-07-11 12:00 A | 218 | 100% |  |  | ARHR | 1h | 1h | 92.18 | 92.18 |
| 220 | 2.2.2.4.5.7 | Consulta de HistorialFamiliar |  | 1h | 2016-07-11 12:00 A | 2016-07-11 13:00 A | 219 | 100% |  |  | ARHR | 1h | 1h | 92.18 | 92.18 |
| 221 | 2.2.2.4.5.8 | Reportes de HistorialFamiliar |  | 2h | 2016-07-11 15:00 A | 2016-07-11 17:00 A | 220 | 100% |  |  | ARHR | 2h | 2h | 184.36 | 184.36 |
| 222 | 2.2.2.4.5.9 | Entrega de reporte de módulo dirección, deudaspagar, deudascobrar, abonoclientes y abonoproveedores. | milestone | 0d | 2016-07-08 10:30 A | 2016-07-08 10:30 A |  | 100% |  |  |  |  |  |  |  |
| 223 | 2.2.2.5 | **Pruebas** |  | 1.56d | 2016-07-11 17:00 A | 2016-07-13 11:30 | 221 | 99% | 0d | 3.44d |  | 12.5h | 12.5h | 1,321.75 | 1,321.75 |
| 224 | 2.2.2.5.1 | **Pruebas de caja blanca** |  | 1.56d | 2016-07-11 17:00 A | 2016-07-13 11:30 |  | 99% | 0d | 3.44d |  | 12.5h | 12.5h | 1,321.75 | 1,321.75 |
| 225 | 2.2.2.5.1.1 | **Mòdulo de Generaciones** |  | 0.31d | 2016-07-11 17:00 A | 2016-07-12 09:30 A |  | 100% |  |  |  | 2.5h | 2.5h | 264.35 | 264.35 |
| 226 | 2.2.2.5.1.1.1 | Pruebas de modulo |  | 1.5h | 2016-07-11 17:00 A | 2016-07-11 18:30 A |  | 100% |  |  | ASC | 1.5h | 1.5h | 158.61 | 158.61 |
| 227 | 2.2.2.5.1.1.2 | Puebas unitarias |  | 1h | 2016-07-11 18:30 A | 2016-07-12 09:30 A | 226 | 100% |  |  | ASC | 1h | 1h | 105.74 | 105.74 |
| 228 | 2.2.2.5.1.2 | **Mòdulo HistorialAcadèmico** |  | 0.31d | 2016-07-12 09:30 A | 2016-07-12 12:00 A | 227 | 100% |  |  |  | 2.5h | 2.5h | 264.35 | 264.35 |
| 229 | 2.2.2.5.1.2.1 | Pruebas de modulo |  | 1.5h | 2016-07-12 09:30 A | 2016-07-12 11:00 A |  | 100% |  |  | ASC | 1.5h | 1.5h | 158.61 | 158.61 |
| 230 | 2.2.2.5.1.2.2 | Puebas unitarias |  | 1h | 2016-07-12 11:00 A | 2016-07-12 12:00 A | 229 | 100% |  |  | ASC | 1h | 1h | 105.74 | 105.74 |
| 231 | 2.2.2.5.1.3 | **Mòdulo HistorialMèdico** |  | 0.31d | 2016-07-12 12:00 A | 2016-07-12 16:30 A | 230 | 100% |  |  |  | 2.5h | 2.5h | 264.35 | 264.35 |
| 232 | 2.2.2.5.1.3.1 | Pruebas de modulo |  | 1.5h | 2016-07-12 12:00 A | 2016-07-12 15:30 A |  | 100% |  |  | ASC | 1.5h | 1.5h | 158.61 | 158.61 |
| 233 | 2.2.2.5.1.3.2 | Puebas unitarias |  | 1h | 2016-07-12 15:30 A | 2016-07-12 16:30 A | 232 | 100% |  |  | ASC | 1h | 1h | 105.74 | 105.74 |
| 234 | 2.2.2.5.1.4 | **Mòdulo HistorialEconòmio** |  | 0.31d | 2016-07-12 16:30 A | 2016-07-12 19:00 A | 233 | 100% |  |  |  | 2.5h | 2.5h | 264.35 | 264.35 |
| 235 | 2.2.2.5.1.4.1 | Pruebas de modulo |  | 1.5h | 2016-07-12 16:30 A | 2016-07-12 18:00 A |  | 100% |  |  | ASC | 1.5h | 1.5h | 158.61 | 158.61 |
| 236 | 2.2.2.5.1.4.2 | Puebas unitarias |  | 1h | 2016-07-12 18:00 A | 2016-07-12 19:00 A | 235 | 100% |  |  | ASC | 1h | 1h | 105.74 | 105.74 |

Notes:
- 214: Realización de la interfaz del módulo de historial familiar
- 215: Realización de las clases de los historial familiar
- 216: Realización de la conexión a la base de datos
- 217: Realización de la codificación del alta a la tabla de historial familiar
- 218: Realización de la codificación de la baja en la tabla de historial familiar
- 219: Realización de la codificación de la actualización a la tabla de historial familiar
- 220: Realización de las consultas correspondientes a la tabla historial familiar
- 221: Realización del reporte de la tabla historial familiar
- 226: Realización de las pruebas de módulo a la tabla generaciones
- 227: Realización de las pruebas unitarias al módulo de generaciones
- 229: Realización de las pruebas de módulo a la tabla historia académico
- 230: Realización de las pruebas unitarias al módulo de historia académico
- 232: Realización de las pruebas de módulo a la tabla historia médico
- 233: Realización de las pruebas unitarias al módulo de historia médico
- 235: Realización de las pruebas de módulo a la tabla historia económico
- 236: Realización de las pruebas unitarias al módulo de historia económico

| ID | WBS | Task | Type | Duration | Start | Finish | Predecessors | Complete | Remaining | Total slack | Resources | Work | Actual work | Cost | Actual cost |
| --- | --- | --- | --- | --- | --- | --- | --- | --- | --- | --- | --- | --- | --- | --- | --- |
| 237 | 2.2.2.5.1.5 | **Mòdulo HistorialFamiliar** |  | 0.31d | 2016-07-12 19:00 A | 2016-07-13 11:30 | 236 | 99% | 0d | 3.44d |  | 2.5h | 2.5h | 264.35 | 264.35 |
| 238 | 2.2.2.5.1.5.1 | Pruebas de modulo |  | 1.5h | 2016-07-13 09:00 A | 2016-07-13 10:30 A |  | 100% |  |  | ASC | 1.5h | 1.5h | 158.61 | 158.61 |
| 239 | 2.2.2.5.1.5.2 | Puebas unitarias |  | 1h | 2016-07-13 10:30 A | 2016-07-13 11:30 A | 238 | 100% |  |  | ASC | 1h | 1h | 105.74 | 105.74 |
| 240 | 2.2.2.5.1.5.3 | Entrega de resultados de pruebas de módulo de dirección, deudaspagar, deudascobrar, abonoclientes y abonoproveedores. | milestone | 0d | 2016-07-12 19:00 | 2016-07-12 19:00 |  |  |  | 3.75d |  |  |  |  |  |
| 241 | 3 | **Implementación** |  | 1.81d | 2016-07-13 11:30 A | 2016-07-15 10:00 | 239 | 83% | 0.31d | 0d |  | 17h | 12h | 1,600.96 | 1,106.16 |
| 242 | 3.1 | Evaliaciòn del hosting |  | 1.5h | 2016-07-13 11:30 A | 2016-07-13 13:00 A |  | 100% |  |  | ARHR | 1.5h | 1.5h | 138.27 | 138.27 |
| 243 | 3.2 | Emplementar el sitio en el hosting |  | 0.5h | 2016-07-13 15:00 A | 2016-07-13 15:30 A | 242 | 100% |  |  | ARHR | 0.5h | 0.5h | 46.09 | 46.09 |
| 244 | 3.3 | Manual de usuario |  | 8h | 2016-07-13 15:30 A | 2016-07-14 15:30 A | 243 | 100% |  |  | ARHR | 8h | 8h | 737.44 | 737.44 |
| 245 | 3.4 | Capacitaciòn |  | 2h | 2016-07-14 15:30 A | 2016-07-14 17:30 A | 244 | 100% |  |  | ARHR | 2h | 2h | 184.36 | 184.36 |
| 246 | 3.5 | **Pruebas de caja blanca** |  | 0.31d | 2016-07-14 17:30 | 2016-07-15 10:00 | 245 |  |  | 0d |  | 5h |  | 494.8 |  |
| 247 | 3.5.1 | Pruebas de rendimiento |  | 1.5h | 2016-07-14 17:30 | 2016-07-14 19:00 |  |  |  | 0d | ARHR; ASC | 3h |  | 296.88 |  |
| 248 | 3.5.2 | Pruebas de sistema |  | 1h | 2016-07-15 09:00 | 2016-07-15 10:00 | 247 |  |  | 0d | ARHR; ASC | 2h |  | 197.92 |  |
| 249 | 4 | **Cierre de proyecto** |  | 1.62d | 2016-07-15 10:00 | 2016-07-18 17:00 | 248 |  |  | 0d |  | 13h |  | 1,592.2 |  |
| 250 | 4.1 | Carta de aceptaciòn |  | 2.5h | 2016-07-15 10:00 | 2016-07-15 12:30 |  |  |  | 0d | BAPG | 2.5h |  | 364.88 |  |
| 251 | 4.2 | Acta de cierre de proyecto |  | 1h | 2016-07-15 12:30 | 2016-07-15 15:30 | 250 |  |  | 0d | BAPG | 1h |  | 145.95 |  |
| 252 | 4.3 | Evaluaciòn de desempeño |  | 2h | 2016-07-15 15:30 | 2016-07-15 17:30 | 251 |  |  | 0d | ARHR | 2h |  | 169.84 |  |
| 253 | 4.4 | Junta de lecciones aprendidas |  | 3h | 2016-07-15 17:30 | 2016-07-18 10:30 | 252 |  |  | 0d | ARHR | 3h |  | 254.76 |  |
| 254 | 4.5 | Revisiòn de adherencias de procesos |  | 1.5h | 2016-07-18 10:30 | 2016-07-18 12:00 | 253 |  |  | 0d | BAPG | 1.5h |  | 218.93 |  |
| 255 | 4.6 | Liberaciòn de recursos |  | 1h | 2016-07-18 12:00 | 2016-07-18 13:00 | 254 |  |  | 0d | BAPG | 1h |  | 145.95 |  |
| 256 | 4.7 | Informe final(cierre) |  | 2h | 2016-07-18 15:00 | 2016-07-18 17:00 | 255 |  |  | 0d | BAPG | 2h |  | 291.9 |  |

Notes:
- 238: Realización de las pruebas de módulo a la tabla historia familiar
- 239: Realización de las pruebas unitarias al módulo de historia familiar
- 242: Evaluar el hosting al cual se subirá la aplicación web
- 243: Implementación de la aplicación web en el hosting seleccionado
- 244: Elaboración del manual de usuario
- 245: Brindar capacitación a la empresa cliente
- 247: Realizar pruebas de rendimiento a la aplicación web en el hosting para corroborar que todo funcione correctamente
- 248: Realizar las pruebas de sistema a la aplicación web para corroborar que funciona bien ya implementado en el hosting
- 250: Redactar la carta de aceptación en la que el cliente esta de acuerdo con lo que se esta entregando
- 251: Se firma el acta en la cual se indica que el proyecto se termino en tiempo y forma
- 252: Realizar una evaluación de desempeño para observar como fue realizado el proyecto
- 253: Retroalimentar a los integrantes del equipo sobre lo realizado en el proyecto
- 254: Realización de revisión sobre como fue que funcionaron los procesos
- 255: Se hace la liberación de los recursos utilizados en la creación del proyecto
- 256: Realización del informe final sobre la elaboración del proyecto
